# Предварительный план2007

Schedule from MS Project, 2013-04-22 to 2014-09-16, A marks actual dates.

## Calendars

- Стандартный: Mon-Fri 09:00-13:00, 14:00-18:00; Sat-Sun off. Exceptions (off unless hours are given): 2013-05-01 to 2013-05-05 (Первое мая), 2013-05-09 to 2013-05-12 (Девятое мая), 2013-12-30 to 2014-01-08 (новый год), 2014-05-01 to 2014-05-04 (Первое мая 2014), 2014-05-09 to 2014-05-11 (Девятое мая 2014).

## Resources

| Resource |
| --- |
| Шилин Роман |
| Аналитик |
| Андрей Пирожков |
| Тугушев Илья |
| Денис Митавский |
| Алексей Львов |
| Андрей Карандей |
| Валерий Мацукевич |
| Java разработчик3 |
| Java разработчик4 |
| WEB-дизайнер |
| Влад Симоненко |
| Андрей Цветков |
| Java разработчик5 |
| Тест Аналитик |
| Java разработчик6 |
| Тестировщик |
| Технический писатель |
| Технолог - администратор |
| Технический писатель2 |
| Системный аналитик1 |
| Системный аналитик2 |
| Системный аналитик3 |
| Системный аналитик4 |
| Владимир Панов |
| Сергей Кашанский |
| Роман Митинков |
| Роман Болотов |
| Глеб Ноздрачев |
| Евгения Капустина |
| Эдуард Михайлов |
| Тимофей Билый |
| (БТЛ) Михаил Ларин |
| (БТЛ) Олег Еренцов |
| (БТЛ) Дмитрий Лякин |
| (БТЛ)Сергей Степыгин |
| Ярослав Бондарчук |
| Александр Власюк |
| Евгений Баланенко |
| Евгений Сафроненко |
| Сергей Околот |
| Леся Пуховая |
| Наталья Смолянец (Смолянец) |
| Антон Ганчев (Киев) |
| Тимофей Щербатый |
| Пестова Ольга (Киев) |
| Игорь Петров |

## Schedule

| ID | WBS | Task | Type | Duration | Start | Finish | Predecessors | Complete | Remaining | Total slack | Free slack | Constraint | Resources | Work | Actual work |
| --- | --- | --- | --- | --- | --- | --- | --- | --- | --- | --- | --- | --- | --- | --- | --- |
| 1 | 1 | **Разработка версии CM4/5** |  | 351d? | 2013-04-22 A | 2014-09-16 |  | 37% | 222.62d? | 0d |  |  |  | 35335h | 11695.1h |
| 2 | 1.1 | Принято решение о начале разработки | milestone | 0d | 2013-04-22 | 2013-04-22 |  |  |  | 20d | 0d | start no earlier than 2013-04-22 |  |  |  |
| 3 | 1.2 | Управление проектом |  | 267d | 2013-04-22 A | 2014-05-21 | 2 | 35% | 173.55d | 117d |  |  | Шилин Роман | 2136h | 747.6h |
| 4 | 1.3 | **Управление требованиями** |  | 331d | 2013-05-27 A | 2014-09-16 | 2 | 19% | 268.4d | 0d |  |  | Аналитик | 4567.2h | 1034.44h |
| 5 | 1.3.1 | Выделен аналитик на проект | milestone | 0d | 2013-05-27 A | 2013-05-27 A |  | 100% |  |  |  | start no earlier than 2013-05-27 |  |  |  |
| 6 | 1.3.2 | Формирование скоупа проекта _ верхний уровень |  | 15d | 2013-05-27 A | 2013-06-14 A | 5 | 100% |  |  |  |  | Евгения Капустина | 120h | 120h |
| 7 | 1.3.3 | Скоуп на систему сформирован и утвержден | milestone | 0d | 2013-06-21 A | 2013-06-21 A | 6FS+5d | 100% |  |  |  |  |  |  |  |
| 8 | 1.3.4 | Сопровождение требований |  | 311d | 2013-06-24 A | 2014-09-16 | 5, 7 | 15% | 264.35d | 0d |  |  | Эдуард Михайлов; Евгения Капустина | 1799.2h | 503.8h |
| 9 | 1.4 | **Создание модуля "Делопроизводство" (документоориентированная среда)** |  | 327d? | 2013-04-22 A | 2014-08-13 |  | 39% | 200.76d? | 24d |  |  |  | 28631.8h | 9913.04h |
| 10 | 1.4.1 | Первичные требования для создания модуля "Делопроизводство" подготовлены | milestone | 0d | 2013-04-22 | 2013-04-22 | 2 |  |  | 176.27d | 0d | finish no earlier than 2012-04-02 |  |  |  |
| 11 | 1.4.2 | **Апробация идей прототипа** |  | 24d | 2013-04-29 A | 2013-06-06 |  | 99% | 0d | 322d |  |  |  | 144h | 144h |
| 12 | 1.4.2.1 | Пирожков доступен | milestone | 0d | 2013-06-03 | 2013-06-03 |  |  |  | 378d |  | start no earlier than 2013-06-03 |  |  |  |
| 13 | 1.4.2.2 | Проведение предварительных испытаний системы |  | 9d | 2013-04-29 A | 2013-05-16 A | 10FS+5d | 100% |  |  |  |  | Андрей Цветков | 72h | 72h |
| 14 | 1.4.2.3 | Описание обработки ВХ. Док. На примере технологий прототипа |  | 9d | 2013-05-20 A | 2013-06-06 A |  | 100% |  |  |  | start no earlier than 2013-05-20 | Андрей Пирожков | 72h | 72h |
| 15 | 1.4.3 | **Настройка инфраструктуры** |  | 37d | 2013-05-20 A | 2013-07-09 | 24 | 67% | 12.33d | 165d | 0d |  |  | 120h | 80h |
| 16 | 1.4.3.1 | Настройка непрерывной интеграции |  | 4d | 2013-05-20 A | 2013-05-23 A |  | 100% |  |  |  |  | Тугушев Илья | 32h | 32h |
| 17 | 1.4.3.2 | Поддержка UNIT-тестирования и интеграционного тестирования на уроне среды непрерывной интеграции |  | 5d | 2013-06-04 | 2013-06-10 |  |  |  | 235.94d |  | start no earlier than 2013-06-04 | Тугушев Илья | 40h |  |
| 18 | 1.4.3.3 | Репакеджинг проекта |  | 3d | 2013-05-27 A | 2013-05-29 A |  | 100% |  |  |  | start no earlier than 2013-05-27 | Сергей Кашанский | 24h | 24h |
| 19 | 1.4.3.4 | Автоматическое заполнение параметров JDBC через Maven |  | 3d | 2013-07-05 A | 2013-07-09 A | 30 | 100% |  |  |  |  | Андрей Цветков | 24h | 24h |
| 20 | 1.4.4 | **Проектирование и формирование ядра системы** |  | 327d? | 2013-04-22 A | 2014-08-13 | 10 | 46% | 175.3d? | 24d |  |  |  | 18203.8h | 7949.84h |
| 21 | 1.4.4.1 | **Определение структуры модуля Делопроизводство** |  | 25d | 2013-04-22 A | 2013-05-31 A |  | 100% |  |  |  |  |  | 352h | 352h |
| 22 | 1.4.4.1.1 | Разбивка на слои |  | 5d | 2013-04-22 A | 2013-04-26 A |  | 100% |  |  |  |  | Денис Митавский [50%]; Андрей Пирожков [50%] | 40h | 40h |
| 23 | 1.4.4.1.2 | Конфигурации, загрузка и инициализация системы в базовой конфигурации |  | 5d | 2013-04-29 A | 2013-05-08 A | 22 | 100% |  |  |  |  | Валерий Мацукевич; Денис Митавский [50%] | 60h | 60h |
| 24 | 1.4.4.1.3 | Базовая конфигурация объектов системы |  | 5d | 2013-05-13 A | 2013-05-17 A | 22, 23 | 100% |  |  |  |  | Денис Митавский [50%]; Валерий Мацукевич | 60h | 60h |
| 25 | 1.4.4.1.4 | Юнит-тестирование - базис |  | 6d | 2013-05-17 A | 2013-05-24 A | 13 | 100% |  |  |  |  | Денис Митавский [50%]; Андрей Цветков | 72h | 72h |
| 26 | 1.4.4.1.5 | Базовая имплементация слоя DAO |  | 5d | 2013-05-20 A | 2013-05-24 A | 24 | 100% |  |  |  |  | Валерий Мацукевич | 40h | 40h |
| 27 | 1.4.4.1.6 | Обеспечение программных компонет верификации первой очереди |  | 5d | 2013-05-27 A | 2013-05-31 A | 26 | 100% |  |  |  |  | Валерий Мацукевич; Андрей Цветков | 80h | 80h |

Notes:
- 27: UNIT тестирование в рамках наработанного кода

| ID | WBS | Task | Type | Duration | Start | Finish | Predecessors | Complete | Remaining | Total slack | Constraint | Resources | Work | Actual work |
| --- | --- | --- | --- | --- | --- | --- | --- | --- | --- | --- | --- | --- | --- | --- |
| 28 | 1.4.4.2 | **DAO** |  | 43d? | 2013-06-03 A | 2013-07-31 A | 26, 27 | 100% |  |  |  |  | 224h | 224h |
| 29 | 1.4.4.2.1 | DAO для бизнес-объектов |  | 7d | 2013-06-03 A | 2013-06-11 A |  | 100% |  |  |  | Валерий Мацукевич | 56h | 56h |
| 30 | 1.4.4.2.2 | DAO для коллекций |  | 13d | 2013-06-12 A | 2013-07-04 A | 29 | 100% |  |  |  | Андрей Цветков | 104h | 104h |
| 31 | 1.4.4.2.3 | Функционал системы готов для проведения проектирования интеграции с GUI СМ4 | milestone | 0d | 2013-06-24 A | 2013-06-24 A | 29, 30 | 100% |  |  |  |  |  |  |
| 32 | 1.4.4.2.4 | DAO - утилитарные поля |  | 6d | 2013-06-25 A | 2013-07-08 A | 30 | 100% |  |  |  | Денис Митавский [50%] | 24h | 24h |
| 33 | 1.4.4.2.5 | DAO - кэш уровня транзакции |  | 5d? | 2013-07-25 A | 2013-07-31 A | 394 | 100% |  |  |  | Влад Симоненко | 40h | 40h |
| 34 | 1.4.4.3 | CRUD-сервис для бизнес-объектов |  | 10d | 2013-06-11 A | 2013-06-24 A | 30FF | 100% |  |  |  | Андрей Цветков | 80h | 80h |
| 35 | 1.4.4.4 | Расширение CRUD для интеграции с CMJ |  | 5d | 2013-08-08 A | 2013-08-14 A |  | 100% |  |  | start no earlier than 2013-08-08 | Андрей Карандей | 40h | 40h |
| 36 | 1.4.4.5 | Поддержка отсортированных дочерних бизнес-объектов |  | 5d | 2013-08-21 | 2013-08-27 | 53 |  |  | 274d |  | Валерий Мацукевич | 40h |  |
| 37 | 1.4.4.6 | Настройка Datasources/Jaas сервера приложений средствами Maven |  | 2d | 2013-07-05 A | 2013-07-08 A | 30 | 100% |  |  |  | Сергей Кашанский | 16h | 16h |
| 38 | 1.4.4.7 | Рефакторинг |  | 4d | 2013-07-03 A | 2013-07-08 A | 26 | 100% |  |  | start no earlier than 2013-07-03 | Валерий Мацукевич | 32h | 32h |
| 39 | 1.4.4.8 | **Права доступа** |  | 65d | 2013-06-12 A | 2013-09-10 |  | 90% | 6.54d | 254d |  |  | 488h | 426.8h |
| 40 | 1.4.4.8.1 | Права - оптимизация хранения (проектирование) |  | 30d | 2013-06-12 A | 2013-07-23 A | 29 | 100% |  |  |  | Андрей Пирожков [50%] | 120h | 120h |
| 41 | 1.4.4.8.2 | Описание существующими декларативными средствами конфигурации |  | 19d | 2013-07-16 A | 2013-08-09 A | 40, 19 | 100% |  |  |  | Андрей Цветков | 152h | 152h |
| 42 | 1.4.4.8.3 | Автофильтрация |  | 10d | 2013-07-29 A | 2013-08-16 A | 41 | 100% |  |  |  | Андрей Цветков | 80h | 80h |
| 43 | 1.4.4.8.4 | Пересчёт прав доступа |  | 17d | 2013-08-19 A | 2013-09-10 | 42 | 55% | 7.65d | 264d |  | Андрей Цветков | 136h | 74.8h |
| 44 | 1.4.4.9 | **Workflow - интеграция с Activiti** |  | 91d | 2013-06-07 A | 2013-10-11 A | 14 | 100% |  |  |  |  | 344h | 344h |
| 45 | 1.4.4.9.1 | Проектирование |  | 10d | 2013-06-07 A | 2013-07-24 A | 40 | 100% |  |  |  | Андрей Пирожков [50%] | 40h | 40h |
| 46 | 1.4.4.9.2 | готова постановка по БП | milestone | 0d | 2013-09-09 A | 2013-09-09 A |  | 100% |  |  | start no earlier than 2013-09-09 |  |  |  |
| 47 | 1.4.4.9.3 | Разработка |  | 20d | 2013-09-16 A | 2013-10-11 A | 45, 46 | 100% |  |  | start no earlier than 2013-09-16 | (БТЛ) Михаил Ларин | 160h | 160h |
| 48 | 1.4.4.9.4 | **Действия** |  | 18d | 2013-09-18 A | 2013-10-11 A |  | 100% |  |  |  |  | 144h | 144h |
| 49 | 1.4.4.9.4.1 | Концепция/Архитектура |  | 4d | 2013-09-18 A | 2013-09-23 A | 421 | 100% |  |  | start no earlier than 2013-09-16 | Денис Митавский | 32h | 32h |
| 50 | 1.4.4.9.4.2 | Реализация |  | 14d | 2013-09-24 A | 2013-10-11 A | 49 | 100% |  |  |  | (БТЛ) Михаил Ларин | 112h | 112h |
| 51 | 1.4.4.10 | **Наследование ???** |  | 8d | 2013-08-09 A | 2013-08-20 A | 45 | 100% |  |  |  | Андрей Пирожков [50%] | 88h | 88h |
| 52 | 1.4.4.10.1 | Проектирование функции "Наследование" |  | 2d | 2013-08-09 A | 2013-08-12 A |  | 100% |  |  | finish no earlier than 2013-08-12 | Андрей Пирожков | 16h | 16h |
| 53 | 1.4.4.10.2 | Разработка функции "Наследование" |  | 6d | 2013-08-13 A | 2013-08-20 A | 52 | 100% |  |  |  | Валерий Мацукевич | 48h | 48h |

Notes:
- 34: - проектирование базового API / - имплементация
- 36: Для отображени и поддержания заданного порядка следования объектов
- 40: Права доступа - оптимизация подхода, / подбор других названий сущностей (таблицы) переименовать таблицы и улучшить производительность
- 41: Права доступа - описание существующими декларативными средствами конфигурации / (для автоматического создания таблиц) + / конфигурирование под-запроса для фильтрации - там же
- 42: Права доступа - авто-фильтрация / + "внедрение в под-запросы"
- 44: Задачи: / - модель процесса (BPMN) / - Имплементация WF - сервиса , взаимодействие системы с Аctiviti
- 51: Архитектура - форма хранения данных (с учетом производительности) / Наследование типов объектов - уровень DAO

| ID | WBS | Task | Type | Duration | Start | Finish | Predecessors | Complete | Remaining | Total slack | Free slack | Constraint | Resources | Work | Actual work |
| --- | --- | --- | --- | --- | --- | --- | --- | --- | --- | --- | --- | --- | --- | --- | --- |
| 54 | 1.4.4.11 | **Коллекции** |  | 103d | 2013-05-29 A | 2013-10-18 |  | 56% | 45.06d | 226d |  |  |  | 300h | 188h |
| 55 | 1.4.4.11.1 | Коллекции - конфигурация |  | 3d | 2013-05-29 A | 2013-05-31 A |  | 100% |  |  |  |  | Денис Митавский | 24h | 24h |
| 56 | 1.4.4.11.2 | DAO - язык запросов коллекций |  | 12d | 2013-05-29 A | 2013-06-17 A | 55 | 100% |  |  |  |  | Сергей Кашанский; Денис Митавский [50%] | 140h | 140h |
| 57 | 1.4.4.11.3 | Сервис получения и получения счетчиков |  | 3d | 2013-05-29 A | 2013-05-31 A | 55 | 100% |  |  |  |  | Сергей Кашанский | 24h | 24h |
| 58 | 1.4.4.11.4 | Принято решение о работе с ПКД | milestone | 0d | 2013-10-01 | 2013-10-01 |  |  |  | 226d | 0d | start no earlier than 2013-10-01 | Денис Митавский [50%] |  |  |
| 59 | 1.4.4.11.5 | ПКД ???? |  | 14d | 2013-10-01 | 2013-10-18 | 56, 51, 58 |  |  | 226d |  |  | Валерий Мацукевич | 112h |  |
| 60 | 1.4.4.12 | **Бизнес-объекты (иерархии доменных объектов)** |  | 56.25d | 2013-07-24 A | 2013-10-10 |  | 90% | 5.79d | 232.75d |  |  |  | 228.8h | 200h |
| 61 | 1.4.4.12.1 | Проектирование |  | 8d | 2013-07-24 A | 2013-08-16 A | 62SF, 52 | 100% |  |  |  |  | Андрей Пирожков [20%] | 12.8h | 12.8h |
| 62 | 1.4.4.12.2 | Реализация1 |  | 3d | 2013-07-31 A | 2013-08-02 A | 419SF | 100% |  |  |  |  | Андрей Пирожков | 24h | 24h |
| 63 | 1.4.4.12.3 | Подготовка описания по обновленным принциапам работы |  | 24d | 2013-08-16 A | 2013-10-10 | 61 | 85% | 3.6d | 232.75d |  |  | Андрей Пирожков | 192h | 163.2h |
| 64 | 1.4.4.13 | **Поиск** |  | 151d | 2013-07-30 A | 2014-03-07 | 34 | 94% | 9.78d | 134d |  |  |  | 630h | 598.4h |
| 65 | 1.4.4.13.1 | Идея поиска оформлена | milestone | 0d | 2013-09-09 A | 2013-09-09 A |  | 100% |  |  |  | finish no earlier than 2013-09-09 |  |  |  |
| 66 | 1.4.4.13.2 | Поиск |  | 43d | 2013-07-30 A | 2013-11-06 A | 65 | 100% |  |  |  |  | Андрей Пирожков [50%]; Андрей Цветков | 264h | 264h |
| 67 | 1.4.4.13.3 | Полнотекстовый поиск |  | 79d | 2013-11-07 A | 2014-03-07 | 65, 66 | 90% | 7.9d | 134d |  | start no earlier than 2013-11-05 | Андрей Пирожков | 366h | 334.4h |
| 68 | 1.4.4.14 | **Слой сопряжения CMJ server (CM4)** |  | 228d? | 2013-08-05 A | 2014-07-03 |  | 28% | 165.28d? | 53d |  |  |  | 9637.04h | 2262.24h |
| 69 | 1.4.4.14.1 | Решение принято и ресурсы достуны | milestone | 0d | 2013-08-05 A | 2013-08-05 A |  | 100% |  |  |  | start no earlier than 2013-08-05 |  |  |  |
| 70 | 1.4.4.14.2 | Реализация коннекторов к платформе |  | 97.25d | 2013-08-08 A | 2013-12-23 | 69FS+3d | 29% | 69.25d | 86d | 0d |  |  |  |  |
| 71 | 1.4.4.14.3 | Описание решения есть. Можно начинать разработку | milestone | 0d | 2013-08-28 A | 2013-08-28 A |  | 100% |  |  |  | start no earlier than 2013-08-28 |  |  |  |
| 72 | 1.4.4.14.4 | Проработка задания выполнена, можно привлекать разработчиков БТЛ | milestone | 0d | 2013-09-18 A | 2013-09-18 A |  | 100% |  |  |  | start no earlier than 2013-09-18 |  |  |  |
| 73 | 1.4.4.14.5 | Рефакторинг СМ 4.2.1 выполнен | milestone | 0d | 2013-09-30 A | 2013-09-30 A |  | 100% |  |  |  | finish no earlier than 2013-09-30 |  |  |  |
| 74 | 1.4.4.14.6 | Структура хранения определена | milestone | 0d | 2013-10-28 A | 2013-10-28 A |  | 100% |  |  |  | finish no earlier than 2013-10-28 |  |  |  |
| 75 | 1.4.4.14.7 | Проектирование завершено - готовность к интеграции | milestone | 0d | 2013-09-23 A | 2013-09-23 A |  | 100% |  |  |  | start no earlier than 2013-09-23 |  |  |  |
| 76 | 1.4.4.14.8 | **Интеграция с CMJ по Внутренним Документам** |  | 99d? | 2013-09-23 A | 2014-02-18 | 75 | 91% | 8.57d? | 147d |  |  |  | 2464.24h | 2238.24h |
| 77 | 1.4.4.14.8.1 | MapperBuilder |  | 28d | 2013-09-23 A | 2013-10-30 A |  | 100% |  |  |  | finish no earlier than 2013-10-01 | Александр Власюк | 224h | 224h |
| 78 | 1.4.4.14.8.2 | Уточнение расширенной постановки по MapperBuilder выполнена | milestone | 0d | 2013-09-27 A | 2013-09-27 A |  | 100% |  |  |  | start no earlier than 2013-09-27 | Тугушев Илья [80%] |  |  |
| 79 | 1.4.4.14.8.3 | Конфиг ДОП СС |  | 1d | 2013-09-25 A | 2013-09-26 A |  | 100% |  |  |  |  | Глеб Ноздрачев [1%] | 0.08h | 0.08h |
| 80 | 1.4.4.14.8.4 | Mapper СС |  | 2d | 2013-10-31 A | 2013-11-01 A | 77, 79 | 100% |  |  |  |  | Глеб Ноздрачев [80%] | 12.8h | 12.8h |
| 81 | 1.4.4.14.8.5 | Конфиг ДОП Каталога |  | 3.75d? | 2013-09-24 A | 2013-09-27 A |  | 100% |  |  |  | start no earlier than 2013-09-24 | Глеб Ноздрачев [80%] | 24h | 24h |
| 82 | 1.4.4.14.8.6 | Mapper Каталога |  | 2d | 2013-12-03 A | 2013-12-04 A | 77, 81, 114 | 100% |  |  |  |  | Глеб Ноздрачев [80%] | 12.8h | 12.8h |
| 83 | 1.4.4.14.8.7 | Конфиг ДОП Портала |  | 3d? | 2013-09-25 A | 2013-09-27 A |  | 100% |  |  |  | start no earlier than 2013-09-25 | Евгений Баланенко | 24h | 24h |
| 84 | 1.4.4.14.8.8 | Mapper Портала |  | 2d | 2013-10-31 A | 2013-11-01 A | 77, 83 | 100% |  |  |  |  | Тугушев Илья [80%] | 12.8h | 12.8h |
| 85 | 1.4.4.14.8.9 | Конфиг ДОП СО |  | 1d | 2013-09-23 A | 2013-09-23 A |  | 100% |  |  |  |  | Глеб Ноздрачев [1%] | 0.08h | 0.08h |
| 86 | 1.4.4.14.8.10 | Maper СО |  | 2d | 2013-12-05 A | 2013-12-06 A | 77, 82 | 100% |  |  |  |  | Глеб Ноздрачев [80%] | 12.8h | 12.8h |
| 87 | 1.4.4.14.8.11 | Конфиг ДОП ВнД |  | 2d | 2013-09-27 A | 2013-10-01 A | 81 | 100% |  |  |  |  | Глеб Ноздрачев [80%] | 12.8h | 12.8h |

Notes:
- 56: DAO - язык запросов коллекций
- 57: Коллекции - сервис получения и получения счетчиков
- 58: Используя язык запросов коллеций
- 59: Для поддержания реализации избранного, отметок о прочтении и т.д.
- 67: Включая взаимодействие с Solr
- 70: Начальная реализация модуля "документооборот" - замена лотуса

| ID | WBS | Task | Type | Duration | Start | Finish | Predecessors | Complete | Remaining | Total slack | Constraint | Resources | Work | Actual work |
| --- | --- | --- | --- | --- | --- | --- | --- | --- | --- | --- | --- | --- | --- | --- |
| 88 | 1.4.4.14.8.12 | **Mapper ВнД** |  | 9d | 2014-01-27 A | 2014-02-06 | 77, 86 | 99% | 0d | 0d |  | Александр Власюк | 232h | 168.4h |
| 89 | 1.4.4.14.8.12.1 | Приступили к выполнению антикризисного плана | milestone | 0d | 2014-01-27 A | 2014-01-27 A |  | 100% |  |  | start no earlier than 2014-01-27 |  |  |  |
| 90 | 1.4.4.14.8.12.2 | Отладка Маппера Поручения |  | 1d | 2014-01-27 A | 2014-01-27 A | 89 | 100% |  |  |  | Александр Власюк | 8h | 8h |
| 91 | 1.4.4.14.8.12.3 | Отладка Маппера исполнения |  | 3d | 2014-01-27 A | 2014-01-29 A | 89 | 100% |  |  |  | Александр Власюк | 24h | 24h |
| 92 | 1.4.4.14.8.12.4 | Вспомогательная коллекция "responce" |  | 3d | 2014-01-27 A | 2014-01-29 A | 89 | 100% |  |  |  | (БТЛ) Михаил Ларин | 24h | 24h |
| 93 | 1.4.4.14.8.12.5 | Отладка мапперов |  | 4d | 2014-01-30 A | 2014-02-04 A | 90, 91 | 100% |  |  |  | Александр Власюк | 32h | 32h |
| 94 | 1.4.4.14.8.12.6 | UI - коллекции (7) |  | 4d | 2014-01-31 A | 2014-02-05 A | 92 | 100% |  |  | finish no earlier than 2014-02-05 | (БТЛ) Михаил Ларин | 32h | 32h |
| 95 | 1.4.4.14.8.12.7 | CollectionProvider методы получения только категорий |  | 5d | 2014-01-31 A | 2014-02-06 A | 92 | 100% |  |  | finish no earlier than 2014-02-06 | (БТЛ) Олег Еренцов | 40h | 40h |
| 96 | 1.4.4.14.8.13 | **Доработка ВнД** |  | 16d | 2014-01-27 A | 2014-02-17 |  | 99% | 0.15d | 148d |  |  | 224h | 224h |
| 97 | 1.4.4.14.8.13.1 | Поддержка работы с Вложениями |  | 3d | 2014-02-04 A | 2014-02-06 A | 89 | 100% |  |  | finish no earlier than 2014-02-06 | Сергей Околот | 24h | 24h |
| 98 | 1.4.4.14.8.13.2 | Поддержка работы с ReachText |  | 1d | 2014-01-27 A | 2014-01-27 A | 89 | 100% |  |  |  | Тугушев Илья | 8h | 8h |
| 99 | 1.4.4.14.8.13.3 | Правила вычисления дправ доступа - реализация |  | 4d | 2014-02-03 A | 2014-02-06 A | 89, 92 | 100% |  |  | finish no earlier than 2014-02-06 | (БТЛ) Михаил Ларин | 32h | 32h |
| 100 | 1.4.4.14.8.13.4 | Поддержка полнотекстового поиска |  | 6d | 2014-02-07 A | 2014-02-14 A | 97 | 100% |  |  |  | Сергей Околот | 48h | 48h |
| 101 | 1.4.4.14.8.13.5 | Базовый сервис поддержки сценариев (+DOEL) |  | 7d | 2014-02-07 A | 2014-02-17 A | 98, 99 | 100% |  |  |  | (БТЛ) Михаил Ларин | 56h | 56h |
| 102 | 1.4.4.14.8.13.6 | **Перенос Логики работы агентов** |  | 10d | 2014-01-27 A | 2014-02-07 |  | 97% | 0.3d | 154d |  |  | 56h | 56h |
| 103 | 1.4.4.14.8.13.6.1 | Подбор варианта реализации |  | 7d | 2014-01-27 A | 2014-02-04 A | 89 | 100% |  |  |  | Андрей Пирожков | 56h | 56h |
| 104 | 1.4.4.14.8.13.6.2 | Реализация и отладка переноса логики |  | 3d | 2014-02-05 A | 2014-02-07 | 103 | 90% | 0.3d | 154d |  |  |  |  |
| 105 | 1.4.4.14.8.14 | Кофиг ДОП СпО |  | 1d | 2013-09-23 A | 2013-09-23 A |  | 100% |  |  |  | Глеб Ноздрачев [1%] | 0.08h | 0.08h |
| 106 | 1.4.4.14.8.15 | Mapper СпО |  | 3d | 2013-11-04 A | 2013-11-06 A | 77, 84 | 100% |  |  |  | Тугушев Илья [80%] | 19.2h | 19.2h |
| 107 | 1.4.4.14.8.16 | Аутентификация |  | 5d | 2014-02-04 A | 2014-02-10 A | 110 | 100% |  |  | start no earlier than 2014-02-04 | Андрей Карандей | 40h | 40h |
| 108 | 1.4.4.14.8.17 | **Настраиваемые коллекции** |  | 83.25d? | 2013-10-01 A | 2014-02-06 A | 81, 87 | 100% |  |  |  |  | 318.4h | 318.4h |
| 109 | 1.4.4.14.8.17.1 | **Системные настройки** |  | 42.25d | 2013-10-01 A | 2013-11-28 A |  | 100% |  |  |  |  | 232h | 232h |
| 110 | 1.4.4.14.8.17.1.1 | Builder коллекций |  | 20d | 2013-10-01 A | 2013-10-29 A |  | 100% |  |  | start no earlier than 2013-09-30 | Влад Симоненко | 160h | 160h |
| 111 | 1.4.4.14.8.17.1.2 | XSD-схема XML-настроек |  | 3d | 2013-10-29 A | 2013-11-01 A | 110 | 100% |  |  |  | Влад Симоненко | 24h | 24h |
| 112 | 1.4.4.14.8.17.1.3 | Чтение XML настроек через спец-Mapper |  | 3d | 2013-11-01 A | 2013-11-06 A | 111 | 100% |  |  |  | Влад Симоненко | 24h | 24h |
| 113 | 1.4.4.14.8.17.1.4 | Mapper папок |  | 3d | 2013-11-26 A | 2013-11-28 A |  | 100% |  |  | start no earlier than 2013-11-26 | Андрей Карандей | 24h | 24h |

Notes:
- 95: Реализовать в CollectionProvider методы получения только категорий (searchCategory(…)). Фильтрация для получения категорий должна производиться на уровне SQL / CMFIVE-416
- 101: Поддержка вычисления выражений и работы с доменными объектами
- 102: ТО, что выполнялось на лотусе ....
- 107: Кто первый освободится Власюк или Симоненко
- 110: Получение коллекций платформы в соотв. с конфигурацией [MMM] (знать коллекции платформы)
- 111: XSD-схема XML-настроек [NNN] 3дн (знать XML, XSD)
- 112: Чтение через спец-Mapper [NNN] 3дн (уметь работать с XML-парсером)

| ID | WBS | Task | Type | Duration | Start | Finish | Predecessors | Complete | Remaining | Total slack | Constraint | Resources | Work | Actual work |
| --- | --- | --- | --- | --- | --- | --- | --- | --- | --- | --- | --- | --- | --- | --- |
| 114 | 1.4.4.14.8.17.2 | **Конфигурация коллекций (логин)** |  | 10d | 2013-11-29 A | 2013-12-12 A | 87 | 100% |  |  |  |  | 80h | 80h |
| 115 | 1.4.4.14.8.17.2.1 | Типовая иерархия кастомных папок (3шт) |  | 5d | 2013-11-29 A | 2013-12-05 A | 113 | 100% |  |  |  | Андрей Карандей | 40h | 40h |
| 116 | 1.4.4.14.8.17.2.2 | Системные настройки для ВнД |  | 5d | 2013-12-06 A | 2013-12-12 A | 115 | 100% |  |  |  | (БТЛ) Олег Еренцов | 40h | 40h |
| 117 | 1.4.4.14.8.17.3 | Проверка работы |  | 1d? | 2013-12-13 A | 2013-12-13 A | 114, 109 | 100% |  |  |  | Глеб Ноздрачев [80%] | 6.4h | 6.4h |
| 118 | 1.4.4.14.8.17.4 | Конфигурация корневой папки навигатора | milestone | 0d | 2014-02-06 A | 2014-02-06 A |  | 100% |  |  | start no earlier than 2014-02-06 | Глеб Ноздрачев |  |  |
| 119 | 1.4.4.14.8.18 | **Разработка адаптеров для Вн** |  | 21d | 2013-09-30 A | 2013-10-28 A |  | 100% |  |  |  |  | 608h | 608h |
| 120 | 1.4.4.14.8.18.1 | Задание по View и Session поставлена | milestone | 0d | 2013-09-30 A | 2013-09-30 A |  | 100% |  |  | start no earlier than 2013-09-30 | Тугушев Илья [80%] |  |  |
| 121 | 1.4.4.14.8.18.2 | Адаптеры View, Session проектирование |  | 11d | 2013-09-30 A | 2013-10-14 A | 120 | 100% |  |  |  | (БТЛ) Олег Еренцов; (БТЛ)Сергей Степыгин | 176h | 176h |
| 122 | 1.4.4.14.8.18.3 | Разработка логики адаптеров view&session |  | 10d | 2013-10-15 A | 2013-10-28 A | 121 | 100% |  |  |  | (БТЛ) Олег Еренцов; (БТЛ)Сергей Степыгин | 160h | 160h |
| 123 | 1.4.4.14.8.18.4 | Разработка архитектуры дя адаптеров database |  | 5d | 2013-09-30 A | 2013-10-04 A | 120 | 100% |  |  |  | Тугушев Илья [80%] | 32h | 32h |
| 124 | 1.4.4.14.8.18.5 | Разработка адаптеров database |  | 15d | 2013-10-07 A | 2013-10-25 A | 123 | 100% |  |  |  | Александр Власюк | 120h | 120h |
| 125 | 1.4.4.14.8.18.6 | Задание по Database и Document поставлена | milestone | 0d | 2013-10-04 A | 2013-10-04 A | 120FS+5d | 100% |  |  |  | Тугушев Илья [80%] |  |  |
| 126 | 1.4.4.14.8.18.7 | Разработка адаптеров DOCUMENT |  | 15d | 2013-10-07 A | 2013-10-25 A | 123 | 100% |  |  |  | Александр Власюк | 120h | 120h |
| 127 | 1.4.4.14.8.19 | **Разработка коллекций (инициализация)** |  | 56d | 2013-10-29 A | 2014-01-24 | 122 | 99% | 0.28d | 164d |  |  | 472h | 469.6h |
| 128 | 1.4.4.14.8.19.1 | Описание полей документов Вн |  | 2d | 2013-10-29 A | 2013-10-30 A |  | 100% |  |  | finish no earlier than 2013-10-28 | Евгений Баланенко | 16h | 16h |
| 129 | 1.4.4.14.8.19.2 | Коллекции Портала |  | 5d | 2013-10-29 A | 2013-11-04 A | 83 | 100% |  |  |  | Евгений Баланенко | 40h | 40h |
| 130 | 1.4.4.14.8.19.3 | Инструктаж по @-формулам проведен | milestone | 0d | 2013-11-04 A | 2013-11-04 A | 129, 121 | 100% |  |  |  | Тугушев Илья [80%] |  |  |
| 131 | 1.4.4.14.8.19.4 | Коллекции СС |  | 5d | 2013-11-05 A | 2013-11-11 A | 129, 128 | 100% |  |  |  | (БТЛ) Олег Еренцов | 40h | 40h |
| 132 | 1.4.4.14.8.19.5 | Коллекции Каталога |  | 5d | 2013-11-05 A | 2013-11-11 A | 129, 81 | 100% |  |  |  | (БТЛ) Дмитрий Лякин | 40h | 40h |
| 133 | 1.4.4.14.8.19.6 | Коллекции СО |  | 5d | 2013-11-05 A | 2013-11-11 A | 129, 85 | 100% |  |  |  | Тугушев Илья [80%] | 32h | 32h |
| 134 | 1.4.4.14.8.19.7 | Коллекции СпО |  | 6d | 2013-11-12 A | 2013-11-19 A | 132 | 100% |  |  |  | (БТЛ) Дмитрий Лякин | 48h | 48h |
| 135 | 1.4.4.14.8.19.8 | **Разработка коллекций (логин)** |  | 16d | 2013-12-24 A | 2014-01-24 |  | 99% | 0.15d | 164d |  |  | 256h | 253.6h |
| 136 | 1.4.4.14.8.19.8.1 | Инициализация прошла | milestone | 0d | 2013-12-24 A | 2013-12-24 A |  | 100% |  |  | start no earlier than 2013-12-24 |  |  |  |
| 137 | 1.4.4.14.8.19.8.2 | Определение состава коллекций после инициализации Вн |  | 1d | 2013-12-24 A | 2013-12-24 A | 136 | 100% |  |  | finish no earlier than 2013-10-28 | Тугушев Илья | 8h | 8h |
| 138 | 1.4.4.14.8.19.8.3 | Коллекции Портала |  | 5d | 2013-12-24 A | 2014-01-09 A | 136 | 100% |  |  |  | Евгений Баланенко | 40h | 40h |
| 139 | 1.4.4.14.8.19.8.4 | Коллекции СС |  | 5d | 2014-01-10 A | 2014-01-16 A | 137, 138 | 100% |  |  |  | (БТЛ) Олег Еренцов | 40h | 40h |
| 140 | 1.4.4.14.8.19.8.5 | Коллекции Каталога |  | 5d | 2014-01-10 A | 2014-01-16 A | 138 | 100% |  |  |  | (БТЛ) Дмитрий Лякин | 40h | 40h |
| 141 | 1.4.4.14.8.19.8.6 | Коллекции СО |  | 5d | 2014-01-10 A | 2014-01-16 A | 138 | 100% |  |  |  | Тугушев Илья [80%] | 32h | 32h |
| 142 | 1.4.4.14.8.19.8.7 | Коллекции СпО |  | 6d | 2014-01-17 A | 2014-01-24 A | 140 | 100% |  |  |  | (БТЛ) Дмитрий Лякин | 48h | 48h |
| 143 | 1.4.4.14.8.19.8.8 | Коллекции ВнД |  | 6d | 2014-01-17 A | 2014-01-24 | 139 | 95% | 0.3d | 164d |  | (БТЛ) Олег Еренцов | 48h | 45.6h |
| 144 | 1.4.4.14.8.20 | ВнД | milestone | 0d | 2014-02-10 | 2014-02-10 | 131, 80, 132, 82, 129, 84, 133, 86, 88, 134, 106, 107, 108, 121 |  |  | 0d |  |  |  |  |

Notes:
- 116: Системные настройки для ВнД (1дескр + 10типов) [NNN] 1 дн
- 117: Х тестовых РКК ВнД [YYY] 2ч
- 128: - документ, описывающий соответствие нотес-полей полям ДОП для модуля ВнД
- 137: - документ, описывающий соответствие нотес-полей полям ДОП для модуля ВнД

| ID | WBS | Task | Type | Duration | Start | Finish | Predecessors | Complete | Remaining | Total slack | Free slack | Constraint | Resources | Work | Actual work |
| --- | --- | --- | --- | --- | --- | --- | --- | --- | --- | --- | --- | --- | --- | --- | --- |
| 145 | 1.4.4.14.8.21 | **Преобразование структуры зранения для Поруч и Исп.** |  | 5d | 2014-02-12 | 2014-02-18 |  |  |  | 147d |  |  |  |  |  |
| 146 | 1.4.4.14.8.21.1 | Принято решение по упрощению ДОП | milestone | 0d | 2014-02-12 | 2014-02-12 |  |  |  | 157d | 0d | start no earlier than 2014-02-12 |  |  |  |
| 147 | 1.4.4.14.8.21.2 | Адаптация ДОП |  | 2d | 2014-02-12 | 2014-02-13 | 146 |  |  | 157d | 0d |  |  |  |  |
| 148 | 1.4.4.14.8.21.3 | Адаптация коллекций |  | 3d | 2014-02-14 | 2014-02-18 | 147 |  |  | 157d |  |  |  |  |  |
| 149 | 1.4.4.14.8.22 | **Адаптация CMJ-server** |  | 2d | 2014-02-11 A | 2014-02-12 | 144 | 50% | 1d | 151d |  |  |  | 32h | 16h |
| 150 | 1.4.4.14.8.22.1 | Подмена РБД для CMJ-Server |  | 2d | 2014-02-11 A | 2014-02-12 A |  | 100% |  |  |  |  | Андрей Карандей | 16h | 16h |
| 151 | 1.4.4.14.8.22.2 | Имплементация аналогов @-функций для Sochi-server |  | 2d | 2014-02-11 | 2014-02-12 |  |  |  | 151d |  |  | (БТЛ) Михаил Ларин | 16h |  |
| 152 | 1.4.4.14.8.23 | Объединение War |  | 1d | 2014-02-11 A | 2014-02-11 A | 144 | 100% |  |  |  |  | Тугушев Илья | 8h | 8h |
| 153 | 1.4.4.14.8.24 | **Инструмент заполнения** |  | 4d? | 2014-02-11 A | 2014-02-14 | 144 | 18% | 3.27d? | 149d |  |  |  | 174.4h | 30.4h |
| 154 | 1.4.4.14.8.24.1 | **Заливка данных для демонстрации** |  | 4d | 2014-02-11 A | 2014-02-14 A |  | 100% |  |  |  |  |  | 30.4h | 30.4h |
| 155 | 1.4.4.14.8.24.1.1 | Подготовка задачи |  | 1d | 2014-02-11 A | 2014-02-11 A |  | 100% |  |  |  |  | Тугушев Илья [80%] | 6.4h | 6.4h |
| 156 | 1.4.4.14.8.24.1.2 | Написание скриптов заливки |  | 3d | 2014-02-12 A | 2014-02-14 A | 155 | 100% |  |  |  |  | Евгений Сафроненко | 24h | 24h |
| 157 | 1.4.4.14.8.24.2 | Инструмент заполнения Каталога |  | 3d? | 2014-02-11 | 2014-02-13 |  |  |  | 150d |  |  | Евгений Сафроненко | 24h |  |
| 158 | 1.4.4.14.8.24.3 | Инструмент заполнения СС |  | 3d? | 2014-02-11 | 2014-02-13 |  |  |  | 150d |  |  | Евгений Сафроненко | 24h |  |
| 159 | 1.4.4.14.8.24.4 | Инструмент заполнения Портала |  | 3d? | 2014-02-11 | 2014-02-13 |  |  |  | 150d |  |  | Евгений Сафроненко | 24h |  |
| 160 | 1.4.4.14.8.24.5 | Инструмент заполнения СО |  | 3d? | 2014-02-11 | 2014-02-13 |  |  |  | 150d |  |  | Евгений Сафроненко | 24h |  |
| 161 | 1.4.4.14.8.24.6 | Инструмент заполнения СпО |  | 3d? | 2014-02-11 | 2014-02-13 |  |  |  | 150d |  |  | Евгений Сафроненко | 24h |  |
| 162 | 1.4.4.14.8.24.7 | Проверка заполнения |  | 3d | 2014-02-11 | 2014-02-13 |  |  |  | 150d |  |  | Тимофей Щербатый | 24h |  |
| 163 | 1.4.4.14.9 | **Интеграция с CMJ по Входящим документам** |  | 26.8d | 2014-02-06 | 2014-03-14 |  |  |  | 53d |  |  |  | 478.4h |  |
| 164 | 1.4.4.14.9.1 | Задание выдано | milestone | 0d | 2014-02-06 | 2014-02-06 |  |  |  | 53d | 0d | start no earlier than 2014-02-06 | Тугушев Илья |  |  |
| 165 | 1.4.4.14.9.2 | Конфиг ДОП |  | 6d | 2014-02-06 | 2014-02-13 | 164 |  |  | 53d | 0d |  | Глеб Ноздрачев | 48h |  |
| 166 | 1.4.4.14.9.3 | Mapper |  | 4.8d | 2014-02-14 | 2014-02-20 | 165 |  |  | 68.2d | 0d |  | Александр Власюк | 38.4h |  |
| 167 | 1.4.4.14.9.4 | **Перенос логики сервисов по вхД** |  | 16d | 2014-02-20 | 2014-03-14 |  |  |  | 68.2d | 0d |  |  | 128h |  |
| 168 | 1.4.4.14.9.4.1 | Задача поставлена |  | 1d | 2014-02-20 | 2014-02-21 | 164, 166 |  |  | 68.2d | 0d |  | Тугушев Илья | 8h |  |
| 169 | 1.4.4.14.9.4.2 | Пролведение процедуры Revers Engineering для процессов |  | 10d | 2014-02-21 | 2014-03-07 | 168 |  |  | 68.2d | 0d |  | Наталья Смолянец (Смолянец) | 80h |  |
| 170 | 1.4.4.14.9.4.3 | Реализация в слое CMJ-CMSochi |  | 5d | 2014-03-07 | 2014-03-14 | 169 |  |  | 68.2d |  |  | Антон Ганчев (Киев) | 40h |  |

Notes:
- 169: Пролведение процедуры Revers Engineering и составлене алгоритма функционирования
- 170: Пнренос логики на java

| ID | WBS | Task | Type | Duration | Start | Finish | Predecessors | Complete | Remaining | Total slack | Free slack | Constraint | Resources | Work | Actual work |
| --- | --- | --- | --- | --- | --- | --- | --- | --- | --- | --- | --- | --- | --- | --- | --- |
| 171 | 1.4.4.14.9.5 | **Разработка коллекций** |  | 17d | 2014-02-14 | 2014-03-10 | 165 |  |  | 53d | 0d |  |  | 264h |  |
| 172 | 1.4.4.14.9.5.1 | Коллекции внутрисистемные |  | 9d | 2014-02-14 | 2014-02-26 | 165 |  |  | 73d | 8d |  | (БТЛ)Сергей Степыгин | 72h |  |
| 173 | 1.4.4.14.9.5.2 | Коллекции GUI |  | 10d | 2014-02-14 | 2014-02-27 | 165 |  |  | 53d | 0d |  | (БТЛ) Дмитрий Лякин | 80h |  |
| 174 | 1.4.4.14.9.5.3 | **Настраиваемые коллекции** |  | 7d | 2014-02-28 | 2014-03-10 | 173 |  |  | 53d | 0d |  |  | 112h |  |
| 175 | 1.4.4.14.9.5.3.1 | **Конфигурация коллекций** |  | 4d | 2014-02-28 | 2014-03-05 |  |  |  | 53d | 0d |  |  | 56h |  |
| 176 | 1.4.4.14.9.5.3.1.1 | Типовая иерархия кастомных папок (3шт) |  | 2d | 2014-02-28 | 2014-03-03 |  |  |  | 53d | 0d |  | (БТЛ) Олег Еренцов | 16h |  |
| 177 | 1.4.4.14.9.5.3.1.2 | Системные настройки для Вх |  | 2d | 2014-03-04 | 2014-03-05 | 176 |  |  | 53d |  |  | (БТЛ) Олег Еренцов | 16h |  |
| 178 | 1.4.4.14.9.5.3.1.3 | Проверка работы |  | 3d | 2014-02-28 | 2014-03-04 |  |  |  | 54d |  |  | (БТЛ) Олег Еренцов | 24h |  |
| 179 | 1.4.4.14.9.5.3.2 | Доработка расширенного поиска |  | 7d | 2014-02-28 | 2014-03-10 | 175SS |  |  | 65d |  |  | Сергей Околот | 56h |  |
| 180 | 1.4.4.14.9.6 | Интеграция по Вх выполнена | milestone | 0d | 2014-03-10 | 2014-03-10 | 166, 174, 172, 171 |  |  | 65d | 8d |  |  |  |  |
| 181 | 1.4.4.14.10 | **Подключение механизма контроля доступа** |  | 6d | 2014-03-20 | 2014-03-27 |  |  |  | 120d |  |  |  |  |  |
| 182 | 1.4.4.14.10.1 | Доступность Ноздрачева | milestone | 0d | 2014-03-20 | 2014-03-20 |  |  |  | 120d | 0d | start no earlier than 2014-03-20 |  |  |  |
| 183 | 1.4.4.14.10.2 | создание типовых матриц доступа |  | 6d | 2014-03-20 | 2014-03-27 | 182 |  |  | 120d |  |  |  |  |  |
| 184 | 1.4.4.14.11 | **Интеграция с CMJ по Договорам** |  | 21.8d | 2014-02-27 A | 2014-03-31 |  | 5% | 20.69d | 118.2d |  |  |  | 600h | 24h |
| 185 | 1.4.4.14.11.1 | Определен исполнитель по составлению конфигураций | milestone | 0d | 2014-02-27 | 2014-02-27 | 173 |  |  | 42d | 0d |  |  |  |  |
| 186 | 1.4.4.14.11.2 | Проектирование и получение оценки работ |  | 2d | 2014-02-28 | 2014-03-03 | 185 |  |  | 57d | 0d |  |  |  |  |
| 187 | 1.4.4.14.11.3 | Конфиг ДОП |  | 3d | 2014-03-04 | 2014-03-06 | 186 |  |  | 57d | 0d | start no earlier than 2014-02-27 | Александр Власюк | 24h |  |
| 188 | 1.4.4.14.11.4 | Mapper |  | 6d | 2014-03-07 A | 2014-03-14 | 187 | 50% | 3d | 122d | 0d |  | Александр Власюк | 48h | 24h |
| 189 | 1.4.4.14.11.5 | **Настраиваемые коллекции** |  | 7d | 2014-03-17 | 2014-03-25 | 188 |  |  | 122d | 0d |  |  | 144h |  |
| 190 | 1.4.4.14.11.5.1 | **Конфигурация коллекций** |  | 5d | 2014-03-17 | 2014-03-21 |  |  |  | 122d | 0d |  |  | 80h |  |
| 191 | 1.4.4.14.11.5.1.1 | Типовая иерархия кастомных папок (3шт) |  | 5d | 2014-03-17 | 2014-03-21 |  |  |  | 122d | 0d |  | Евгений Баланенко | 40h |  |
| 192 | 1.4.4.14.11.5.1.2 | Системные настройки для Дгв |  | 5d | 2014-03-17 | 2014-03-21 | 191SS |  |  | 123d |  |  | Евгений Баланенко | 40h |  |
| 193 | 1.4.4.14.11.5.2 | Проверка работы |  | 1d | 2014-03-24 | 2014-03-24 | 190 |  |  | 123d | 0d |  | Тимофей Билый | 8h |  |
| 194 | 1.4.4.14.11.5.3 | Доработка расширенного поиска |  | 7d | 2014-03-17 | 2014-03-25 | 191SS |  |  | 122d |  |  | Сергей Околот | 56h |  |
| 195 | 1.4.4.14.11.5.4 | Конфигурация для модуля "Договора" получена | milestone | 0d | 2014-03-24 | 2014-03-24 | 193 |  |  | 107d |  |  |  |  |  |

Notes:
- 177: Системные настройки для ВнД (1дескр + 10типов) [NNN] 1 дн
- 178: Х тестовых РКК ВнД [YYY] 2ч
- 192: Системные настройки для ВнД (1дескр + 10типов) [NNN] 1 дн
- 193: Х тестовых РКК ВнД [YYY] 2ч

| ID | WBS | Task | Type | Duration | Start | Finish | Predecessors | Total slack | Free slack | Constraint | Resources | Work |
| --- | --- | --- | --- | --- | --- | --- | --- | --- | --- | --- | --- | --- |
| 196 | 1.4.4.14.11.6 | **Перенос логики сервисов по Дгв** |  | 11d | 2014-03-14 | 2014-03-31 |  | 68.2d |  |  |  | 168h |
| 197 | 1.4.4.14.11.6.1 | Задача поставлена |  | 1d | 2014-03-14 | 2014-03-17 | 167 | 68.2d | 0d |  | Тугушев Илья | 8h |
| 198 | 1.4.4.14.11.6.2 | Пролведение процедуры Revers Engineering для процессов |  | 10d | 2014-03-17 | 2014-03-31 | 197, 187 | 68.2d | 0d |  | Наталья Смолянец (Смолянец) | 80h |
| 199 | 1.4.4.14.11.6.3 | Реализация в слое CMJ-CMSochi |  | 10d | 2014-03-17 | 2014-03-31 | 198SS | 68.2d | 0d |  | Антон Ганчев (Киев) | 80h |
| 200 | 1.4.4.14.11.7 | **Разработка коллекций** |  | 9d | 2014-03-06 | 2014-03-18 |  | 53d |  |  |  | 216h |
| 201 | 1.4.4.14.11.7.1 | Коллекции |  | 9d | 2014-03-06 | 2014-03-18 | 175 | 53d | 0d |  | (БТЛ) Олег Еренцов; (БТЛ) Дмитрий Лякин; (БТЛ)Сергей Степыгин | 216h |
| 202 | 1.4.4.14.11.8 | Интеграция по Дгв выполнена | milestone | 0d | 2014-03-25 | 2014-03-25 | 188, 189, 201 | 106d |  |  |  |  |
| 203 | 1.4.4.14.12 | **Интеграция с CMJ по Исходящие документам** |  | 23.8d | 2014-03-07 | 2014-04-09 | 144 | 57d |  |  |  | 516.8h |
| 204 | 1.4.4.14.12.1 | Конфиг ДОП |  | 3d | 2014-03-07 | 2014-03-11 | 187 | 57d | 0d |  | Александр Власюк | 24h |
| 205 | 1.4.4.14.12.2 | Mapper |  | 7d | 2014-03-12 | 2014-03-20 | 204 | 57d | 0d |  | Александр Власюк | 56h |
| 206 | 1.4.4.14.12.3 | **Настраиваемые коллекции** |  | 8d | 2014-03-12 | 2014-03-21 |  | 59d | 6d |  |  | 108.8h |
| 207 | 1.4.4.14.12.3.1 | **Конфигурация коллекций** |  | 6d | 2014-03-12 | 2014-03-19 |  | 59d | 0d |  |  | 96h |
| 208 | 1.4.4.14.12.3.1.1 | Типовая иерархия кастомных папок (3шт) |  | 6d | 2014-03-12 | 2014-03-19 | 204 | 59d | 0d |  | Евгений Сафроненко | 48h |
| 209 | 1.4.4.14.12.3.1.2 | Системные настройки для Исх |  | 6d | 2014-03-12 | 2014-03-19 | 208SS | 59d |  |  | Тимофей Билый | 48h |
| 210 | 1.4.4.14.12.3.2 | Проверка работы |  | 2d | 2014-03-20 | 2014-03-21 | 207 | 59d |  |  | Глеб Ноздрачев [80%] | 12.8h |
| 211 | 1.4.4.14.12.4 | **Перенос логики сервисов по Исх** |  | 7d | 2014-03-31 | 2014-04-09 | 205 | 68.2d | 0d |  |  | 112h |
| 212 | 1.4.4.14.12.4.1 | Задание поставлено | milestone | 0d | 2014-03-31 | 2014-03-31 | 199 | 52.2d | 0d | start no earlier than 2013-09-30 | Тугушев Илья [80%] |  |
| 213 | 1.4.4.14.12.4.2 | Пролведение процедуры Revers Engineering для процессов |  | 7d | 2014-03-31 | 2014-04-09 | 212 | 68.2d | 0d |  | Наталья Смолянец (Смолянец) | 56h |
| 214 | 1.4.4.14.12.4.3 | Реализация в слое CMJ-CMSochi |  | 7d | 2014-03-31 | 2014-04-09 | 213SS | 68.2d |  |  | Антон Ганчев (Киев) | 56h |
| 215 | 1.4.4.14.12.5 | **Разработка коллекций** |  | 9d | 2014-03-19 | 2014-03-31 |  | 53d |  |  |  | 216h |
| 216 | 1.4.4.14.12.5.1 | Коллекции |  | 9d | 2014-03-19 | 2014-03-31 | 201 | 53d | 0d |  | (БТЛ) Олег Еренцов; (БТЛ) Дмитрий Лякин; (БТЛ)Сергей Степыгин | 216h |
| 217 | 1.4.4.14.12.6 | Интеграция по Исх выполнена | milestone | 0d | 2014-03-31 | 2014-03-31 | 205, 206, 216 | 53d | 0d |  |  |  |
| 218 | 1.4.4.14.13 | Получена версия CM4.X c WF движком | milestone | 0d | 2014-03-21 | 2014-03-21 | 180, 222 | 57d | 0d | start no earlier than 2014-03-10 |  |  |
| 219 | 1.4.4.14.14 | **Переход на 4.3 CMJ** |  | 37d | 2014-03-14 | 2014-05-07 |  | 57d | 0d |  |  | 904h |
| 220 | 1.4.4.14.14.1 | **Модификация CMJ** |  | 5d | 2014-03-21 | 2014-03-27 |  | 110d |  |  |  | 40h |
| 221 | 1.4.4.14.14.1.1 | Для отложенного добавления персон |  | 5d | 2014-03-21 | 2014-03-27 | 218 | 110d |  |  | Глеб Ноздрачев | 40h |
| 222 | 1.4.4.14.14.2 | Адаптация под функционал настраиваемых реквизитов |  | 5d | 2014-03-14 | 2014-03-21 | 223SF | 57d | 0d |  | Тугушев Илья; Глеб Ноздрачев; Java разработчик3; Тестировщик | 160h |
| 223 | 1.4.4.14.14.3 | Конфиг ДОП |  | 3d | 2014-03-21 | 2014-03-25 | 205 | 57d | 0d |  | Александр Власюк | 24h |
| 224 | 1.4.4.14.14.4 | Mapper |  | 5d | 2014-03-26 | 2014-04-01 | 223 | 107d |  |  | Александр Власюк | 40h |
| 225 | 1.4.4.14.14.5 | Коллекции |  | 8d | 2014-04-01 | 2014-04-10 | 217 | 53d | 0d |  | (БТЛ) Олег Еренцов; (БТЛ) Дмитрий Лякин; (БТЛ)Сергей Степыгин | 192h |
| 226 | 1.4.4.14.14.6 | Настройка адаптеров для 4.3 |  | 3d | 2014-03-21 | 2014-03-25 | 222 | 112d |  |  | Тугушев Илья; Глеб Ноздрачев; Java разработчик3; Тестировщик | 96h |
| 227 | 1.4.4.14.14.7 | Помещение сущностей во временный модуль |  | 12d | 2014-03-21 | 2014-04-07 | 223SS | 103d |  |  | Сергей Околот | 96h |
| 228 | 1.4.4.14.14.8 | Проверки сборки и функционала |  | 12d | 2014-03-21 | 2014-04-07 | 223SS | 83d |  |  | Java разработчик3 | 96h |
| 229 | 1.4.4.14.14.9 | Интеграция с мобильным клиентом - верефикация возможности |  | 20d | 2014-04-08 | 2014-05-07 | 228 | 83d |  |  | Java разработчик3 | 160h |

Notes:
- 198: Пролведение процедуры Revers Engineering и составлене алгоритма функционирования
- 199: Пнренос логики на java
- 209: Системные настройки для ВнД (1дескр + 10типов) [NNN] 1 дн
- 210: Х тестовых РКК ВнД [YYY] 2ч

| ID | WBS | Task | Type | Duration | Start | Finish | Predecessors | Total slack | Free slack | Constraint | Resources | Work |
| --- | --- | --- | --- | --- | --- | --- | --- | --- | --- | --- | --- | --- |
| 230 | 1.4.4.14.15 | **Интеграция с CMJ по ОРД** |  | 23d? | 2014-03-21 | 2014-04-22 |  | 58d |  |  |  | 526.4h |
| 231 | 1.4.4.14.15.1 | Конфиг ДОП |  | 3d | 2014-03-21 | 2014-03-25 | 205, 188SF | 46d | 0d |  | Александр Власюк | 24h |
| 232 | 1.4.4.14.15.2 | Mapper |  | 5d | 2014-03-26 | 2014-04-01 | 231 | 101d | 0d |  | Александр Власюк | 40h |
| 233 | 1.4.4.14.15.3 | **Настраиваемые коллекции** |  | 8d? | 2014-04-02 | 2014-04-11 | 232 | 103d | 7d |  |  | 158.4h |
| 234 | 1.4.4.14.15.3.1 | **Конфигурация коллекций** |  | 7d | 2014-04-02 | 2014-04-10 |  | 103d | 0d |  |  | 152h |
| 235 | 1.4.4.14.15.3.1.1 | Типовая иерархия кастомных папок (3шт) |  | 6d | 2014-04-02 | 2014-04-09 |  | 103d | 0d |  | Евгений Сафроненко | 48h |
| 236 | 1.4.4.14.15.3.1.2 | Системные настройки для ОРД |  | 6d | 2014-04-02 | 2014-04-09 | 235SS | 103d | 2d |  | Тимофей Билый | 48h |
| 237 | 1.4.4.14.15.3.1.3 | Доработка расширенного поиска |  | 7d | 2014-04-02 | 2014-04-10 | 235SS | 109d |  |  | Сергей Околот | 56h |
| 238 | 1.4.4.14.15.3.2 | Проверка работы |  | 1d? | 2014-04-11 | 2014-04-11 | 234 | 109d |  |  | Глеб Ноздрачев [80%] | 6.4h |
| 239 | 1.4.4.14.15.4 | **Перенос логики сервисов по ОРД** |  | 7d | 2014-04-09 | 2014-04-18 |  | 68.2d |  |  |  | 112h |
| 240 | 1.4.4.14.15.4.1 | Задание поставлено | milestone | 0d | 2014-04-09 | 2014-04-09 | 211 | 45.2d | 0d | start no earlier than 2013-09-30 | Тугушев Илья [80%] |  |
| 241 | 1.4.4.14.15.4.2 | Пролведение процедуры Revers Engineering для процессов |  | 7d | 2014-04-09 | 2014-04-18 | 240 | 68.2d | 0d |  | Наталья Смолянец (Смолянец) | 56h |
| 242 | 1.4.4.14.15.4.3 | Реализация в слое CMJ-CMSochi |  | 7d | 2014-04-09 | 2014-04-18 | 241SS | 97.2d | 0d |  | Антон Ганчев (Киев) | 56h |
| 243 | 1.4.4.14.15.5 | **Разработка коллекций** |  | 8d | 2014-04-11 | 2014-04-22 | 217 | 53d |  |  |  | 192h |
| 244 | 1.4.4.14.15.5.1 | Коллекции |  | 8d | 2014-04-11 | 2014-04-22 | 231, 225 | 53d | 0d |  | (БТЛ) Олег Еренцов; (БТЛ) Дмитрий Лякин; (БТЛ)Сергей Степыгин | 192h |
| 245 | 1.4.4.14.15.6 | Интеграция по ОРД выполнена | milestone | 0d | 2014-04-22 | 2014-04-22 | 232, 233, 244 | 86d |  |  |  |  |
| 246 | 1.4.4.14.16 | **Интеграция с CMJ по самостоятельным поручениям** |  | 23d? | 2014-04-02 | 2014-05-06 |  | 94d |  |  |  | 526.4h |
| 247 | 1.4.4.14.16.1 | Конфиг ДОП |  | 3d | 2014-04-02 | 2014-04-04 | 232 | 101d | 0d |  | Александр Власюк | 24h |
| 248 | 1.4.4.14.16.2 | Mapper |  | 5d | 2014-04-07 | 2014-04-11 | 247 | 101d | 0d |  | Александр Власюк | 40h |
| 249 | 1.4.4.14.16.3 | **Настраиваемые коллекции** |  | 8d? | 2014-04-14 | 2014-04-23 | 248 | 101d | 7d |  |  | 158.4h |
| 250 | 1.4.4.14.16.3.1 | **Конфигурация коллекций** |  | 7d | 2014-04-14 | 2014-04-22 | 236 | 101d | 0d |  |  | 152h |
| 251 | 1.4.4.14.16.3.1.1 | Типовая иерархия кастомных папок (3шт) |  | 6d | 2014-04-14 | 2014-04-21 |  | 101d | 0d |  | Евгений Сафроненко | 48h |
| 252 | 1.4.4.14.16.3.1.2 | Системные настройки для СамПор |  | 6d | 2014-04-14 | 2014-04-21 | 251SS | 102d |  |  | Тимофей Билый | 48h |
| 253 | 1.4.4.14.16.3.1.3 | Доработка расширенного поиска |  | 7d | 2014-04-14 | 2014-04-22 | 251SS | 101d |  |  | Сергей Околот | 56h |
| 254 | 1.4.4.14.16.3.2 | Проверка работы |  | 1d? | 2014-04-23 | 2014-04-23 | 250 | 101d |  |  | Глеб Ноздрачев [80%] | 6.4h |

Notes:
- 236: Системные настройки для ВнД (1дескр + 10типов) [NNN] 1 дн
- 238: Х тестовых РКК ВнД [YYY] 2ч
- 252: Системные настройки для ВнД (1дескр + 10типов) [NNN] 1 дн
- 254: Х тестовых РКК ВнД [YYY] 2ч

| ID | WBS | Task | Type | Duration | Start | Finish | Predecessors | Total slack | Free slack | Constraint | Resources | Work |
| --- | --- | --- | --- | --- | --- | --- | --- | --- | --- | --- | --- | --- |
| 255 | 1.4.4.14.16.4 | **Перенос логики сервисов по СамПор** |  | 7d | 2014-04-18 | 2014-04-29 |  | 97.2d |  |  |  | 112h |
| 256 | 1.4.4.14.16.4.1 | Задание поставлено | milestone | 0d | 2014-04-18 | 2014-04-18 | 242 | 81.2d | 0d | start no earlier than 2013-09-30 | Тугушев Илья [80%] |  |
| 257 | 1.4.4.14.16.4.2 | Пролведение процедуры Revers Engineering для процессов |  | 7d | 2014-04-18 | 2014-04-29 | 256 | 97.2d | 0d |  | Наталья Смолянец (Смолянец) | 56h |
| 258 | 1.4.4.14.16.4.3 | Реализация в слое CMJ-CMSochi |  | 7d | 2014-04-18 | 2014-04-29 | 257SS | 97.2d |  |  | Антон Ганчев (Киев) | 56h |
| 259 | 1.4.4.14.16.5 | **Разработка коллекций** |  | 8d | 2014-04-23 | 2014-05-06 |  | 94d |  |  |  | 192h |
| 260 | 1.4.4.14.16.5.1 | Коллекции |  | 8d | 2014-04-23 | 2014-05-06 | 247, 244 | 94d | 0d |  | (БТЛ) Олег Еренцов; (БТЛ) Дмитрий Лякин; (БТЛ)Сергей Степыгин | 192h |
| 261 | 1.4.4.14.16.6 | Интеграция по СамПор выполнена | milestone | 0d | 2014-05-06 | 2014-05-06 | 248, 249, 260 | 78d |  |  |  |  |
| 262 | 1.4.4.14.17 | **Интеграция с CMJ по ОГ** |  | 28d? | 2014-03-26 | 2014-05-06 |  | 58d |  |  |  | 526.4h |
| 263 | 1.4.4.14.17.1 | Конфиг ДОП |  | 3d | 2014-03-26 | 2014-03-28 | 231 | 58d | 0d |  | Александр Власюк | 24h |
| 264 | 1.4.4.14.17.2 | Mapper |  | 5d | 2014-03-31 | 2014-04-04 | 263 | 58d | 0d |  | Александр Власюк | 40h |
| 265 | 1.4.4.14.17.3 | **Настраиваемые коллекции** |  | 8d? | 2014-04-07 | 2014-04-16 | 264 | 58d | 12d |  |  | 158.4h |
| 266 | 1.4.4.14.17.3.1 | **Конфигурация коллекций** |  | 7d | 2014-04-07 | 2014-04-15 |  | 58d | 0d |  |  | 152h |
| 267 | 1.4.4.14.17.3.1.1 | Типовая иерархия кастомных папок (3шт) |  | 6d | 2014-04-07 | 2014-04-14 |  | 58d | 0d |  | Евгений Сафроненко | 48h |
| 268 | 1.4.4.14.17.3.1.2 | Системные настройки для ОГ |  | 6d | 2014-04-07 | 2014-04-14 | 267SS | 59d |  |  | Тимофей Билый | 48h |
| 269 | 1.4.4.14.17.3.1.3 | Доработка расширенного поиска |  | 7d | 2014-04-07 | 2014-04-15 | 267SS | 58d |  |  | Сергей Околот | 56h |
| 270 | 1.4.4.14.17.3.2 | Проверка работы |  | 1d? | 2014-04-16 | 2014-04-16 | 266 | 106d |  |  | Глеб Ноздрачев [80%] | 6.4h |
| 271 | 1.4.4.14.17.4 | **Перенос логики сервисов по ОГ** |  | 7d | 2014-04-18 | 2014-04-29 |  | 68.2d |  |  |  | 112h |
| 272 | 1.4.4.14.17.4.1 | Задание поставлено | milestone | 0d | 2014-04-18 | 2014-04-18 | 263, 241 | 45.2d | 0d | start no earlier than 2013-09-30 | Тугушев Илья [80%] |  |
| 273 | 1.4.4.14.17.4.2 | Пролведение процедуры Revers Engineering для процессов |  | 7d | 2014-04-18 | 2014-04-29 | 272 | 68.2d | 0d |  | Наталья Смолянец (Смолянец) | 56h |
| 274 | 1.4.4.14.17.4.3 | Реализация в слое CMJ-CMSochi |  | 7d | 2014-04-18 | 2014-04-29 | 273SS | 68.2d | 0d |  | Антон Ганчев (Киев) | 56h |
| 275 | 1.4.4.14.17.5 | **Разработка коллекций** |  | 8d | 2014-04-23 | 2014-05-06 |  | 53d | 0d |  |  | 192h |
| 276 | 1.4.4.14.17.5.1 | Коллекции |  | 8d | 2014-04-23 | 2014-05-06 | 263, 244 | 53d | 0d |  | (БТЛ) Олег Еренцов; (БТЛ) Дмитрий Лякин; (БТЛ)Сергей Степыгин | 192h |
| 277 | 1.4.4.14.17.6 | Интеграция по ОГ выполнена | milestone | 0d | 2014-05-06 | 2014-05-06 | 264, 265, 276 | 78d |  |  |  |  |
| 278 | 1.4.4.14.18 | **Интеграция с CMJ по WF** |  | 31d? | 2014-04-07 | 2014-05-22 |  | 58d |  |  |  | 398.4h |
| 279 | 1.4.4.14.18.1 | Конфиг ДОП |  | 1d | 2014-04-07 | 2014-04-07 | 264 | 58d | 0d |  | Александр Власюк | 8h |
| 280 | 1.4.4.14.18.2 | Mapper |  | 3d | 2014-04-08 | 2014-04-10 | 279 | 58d | 0d |  | Александр Власюк | 24h |

Notes:
- 268: Системные настройки для ВнД (1дескр + 10типов) [NNN] 1 дн
- 270: Х тестовых РКК ВнД [YYY] 2ч

| ID | WBS | Task | Type | Duration | Start | Finish | Predecessors | Total slack | Free slack | Constraint | Resources | Work |
| --- | --- | --- | --- | --- | --- | --- | --- | --- | --- | --- | --- | --- |
| 281 | 1.4.4.14.18.3 | **Настраиваемые коллекции** |  | 8d? | 2014-04-16 | 2014-04-25 | 280 | 58d | 10d |  |  | 126.4h |
| 282 | 1.4.4.14.18.3.1 | **Конфигурация коллекций** |  | 7d | 2014-04-16 | 2014-04-24 | 266 | 58d | 0d |  |  | 120h |
| 283 | 1.4.4.14.18.3.1.1 | Типовая иерархия кастомных папок (3шт) |  | 4d | 2014-04-16 | 2014-04-21 |  | 58d | 0d |  | Евгений Сафроненко | 32h |
| 284 | 1.4.4.14.18.3.1.2 | Системные настройки для WF |  | 4d | 2014-04-16 | 2014-04-21 | 283SS | 58d | 0d |  | Тимофей Билый | 32h |
| 285 | 1.4.4.14.18.3.1.3 | Доработка расширенного поиска |  | 7d | 2014-04-16 | 2014-04-24 | 283SS | 99d |  |  | Сергей Околот | 56h |
| 286 | 1.4.4.14.18.3.2 | Проверка работы |  | 1d? | 2014-04-25 | 2014-04-25 | 282 | 99d |  |  | Глеб Ноздрачев [80%] | 6.4h |
| 287 | 1.4.4.14.18.4 | **Перенос логики сервисов по WF** |  | 3d | 2014-04-29 | 2014-05-06 |  | 68.2d |  |  |  | 48h |
| 288 | 1.4.4.14.18.4.1 | Задание поставлено | milestone | 0d | 2014-04-29 | 2014-04-29 | 279, 274 | 45.2d | 0d | start no earlier than 2013-09-30 | Тугушев Илья [80%] |  |
| 289 | 1.4.4.14.18.4.2 | Пролведение процедуры Revers Engineering для процессов |  | 3d | 2014-04-29 | 2014-05-06 | 288 | 68.2d | 0d |  | Наталья Смолянец (Смолянец) | 24h |
| 290 | 1.4.4.14.18.4.3 | Реализация в слое CMJ-CMSochi |  | 3d | 2014-04-29 | 2014-05-06 | 289SS | 68.2d | 0d |  | Антон Ганчев (Киев) | 24h |
| 291 | 1.4.4.14.18.5 | **Разработка адаптеров для СрвСогл** |  | 10d | 2014-05-07 | 2014-05-22 |  | 83d |  |  |  | 72h |
| 292 | 1.4.4.14.18.5.1 | Задание поставлено | milestone | 0d | 2014-05-07 | 2014-05-07 | 279, 219 | 83d | 0d | start no earlier than 2013-09-30 | Тугушев Илья [80%] |  |
| 293 | 1.4.4.14.18.5.2 | Разработка архитектуры дя адаптеров |  | 5d | 2014-05-08 | 2014-05-15 | 292 | 83d | 0d |  | Тугушев Илья [80%] | 32h |
| 294 | 1.4.4.14.18.5.3 | Разработка адаптеров |  | 5d | 2014-05-16 | 2014-05-22 | 293 | 83d |  |  | Александр Власюк | 40h |
| 295 | 1.4.4.14.18.6 | **Разработка коллекций** |  | 5d | 2014-05-07 | 2014-05-14 |  | 53d |  |  |  | 120h |
| 296 | 1.4.4.14.18.6.1 | Коллекции |  | 5d | 2014-05-07 | 2014-05-14 | 279, 275 | 53d | 0d |  | (БТЛ) Олег Еренцов; (БТЛ) Дмитрий Лякин; (БТЛ)Сергей Степыгин | 120h |
| 297 | 1.4.4.14.18.7 | Интеграция по WF выполнена | milestone | 0d | 2014-05-14 | 2014-05-14 | 280, 281, 296 | 73d |  |  |  |  |
| 298 | 1.4.4.14.19 | **Интеграция с CMJ по сервису Контроля Заданий** |  | 28d? | 2014-04-11 | 2014-05-23 |  | 58d |  |  |  | 502.4h |
| 299 | 1.4.4.14.19.1 | Конфиг ДОП |  | 3d | 2014-04-11 | 2014-04-15 | 280 | 58d | 0d |  | Александр Власюк | 24h |
| 300 | 1.4.4.14.19.2 | Mapper |  | 5d | 2014-04-16 | 2014-04-22 | 299 | 58d | 0d |  | Александр Власюк | 40h |
| 301 | 1.4.4.14.19.3 | **Настраиваемые коллекции** |  | 10d? | 2014-04-29 | 2014-05-16 | 300 | 71.2d | 5.2d |  |  | 158.4h |
| 302 | 1.4.4.14.19.3.1 | **Конфигурация коллекций** |  | 9d | 2014-04-29 | 2014-05-15 |  | 71.2d | 0d |  |  | 152h |
| 303 | 1.4.4.14.19.3.1.1 | Типовая иерархия кастомных папок |  | 6d | 2014-05-06 | 2014-05-15 | 290 | 68.2d | 0d |  | Евгений Сафроненко | 48h |
| 304 | 1.4.4.14.19.3.1.2 | Доработка расширенного поиска |  | 7d | 2014-04-29 | 2014-05-13 | 290SS | 89.2d |  |  | Сергей Околот | 56h |
| 305 | 1.4.4.14.19.3.1.3 | Системные настройки для КЗ |  | 6d | 2014-05-06 | 2014-05-15 | 303SS | 68.2d | 0d |  | Тимофей Билый | 48h |
| 306 | 1.4.4.14.19.3.2 | Проверка работы |  | 1d? | 2014-05-15 | 2014-05-16 | 302 | 87.2d |  |  | Глеб Ноздрачев [80%] | 6.4h |

Notes:
- 284: Системные настройки для ВнД (1дескр + 10типов) [NNN] 1 дн
- 286: Х тестовых РКК ВнД [YYY] 2ч
- 305: Системные настройки для ВнД (1дескр + 10типов) [NNN] 1 дн
- 306: Х тестовых РКК ВнД [YYY] 2ч

| ID | WBS | Task | Type | Duration | Start | Finish | Predecessors | Total slack | Free slack | Constraint | Resources | Work |
| --- | --- | --- | --- | --- | --- | --- | --- | --- | --- | --- | --- | --- |
| 307 | 1.4.4.14.19.4 | **Перенос логики сервисов по КЗ** |  | 11d | 2014-04-15 | 2014-04-30 |  | 62d |  |  |  | 112h |
| 308 | 1.4.4.14.19.4.1 | Задание поставлено | milestone | 0d | 2014-04-15 | 2014-04-15 | 299 | 62d | 4d | start no earlier than 2013-09-30 | Тугушев Илья [80%] |  |
| 309 | 1.4.4.14.19.4.2 | Пролведение процедуры Revers Engineering для процессов |  | 7d | 2014-04-22 | 2014-04-30 | 308, 284 | 58d | 0d |  | Наталья Смолянец (Смолянец) | 56h |
| 310 | 1.4.4.14.19.4.3 | Реализация в слое CMJ-CMSochi |  | 7d | 2014-04-22 | 2014-04-30 | 309SS | 96d |  |  | Антон Ганчев (Киев) | 56h |
| 311 | 1.4.4.14.19.5 | **Разработка коллекций** |  | 7d | 2014-05-15 | 2014-05-23 |  | 53d |  |  |  | 168h |
| 312 | 1.4.4.14.19.5.1 | Коллекции |  | 7d | 2014-05-15 | 2014-05-23 | 299, 296 | 53d | 0d |  | (БТЛ) Олег Еренцов; (БТЛ) Дмитрий Лякин; (БТЛ)Сергей Степыгин | 168h |
| 313 | 1.4.4.14.19.6 | Интеграция по КЗ выполнена | milestone | 0d | 2014-05-23 | 2014-05-23 | 300, 301, 312 | 82d |  |  |  |  |
| 314 | 1.4.4.14.20 | **Интеграция с CMJ по Формированию дел** |  | 26d? | 2014-04-23 | 2014-06-02 |  | 58d |  |  |  | 478.4h |
| 315 | 1.4.4.14.20.1 | Конфиг ДОП |  | 3d | 2014-04-23 | 2014-04-25 | 300 | 58d | 0d |  | Александр Власюк | 24h |
| 316 | 1.4.4.14.20.2 | Mapper |  | 5d | 2014-04-28 | 2014-05-06 | 315 | 58d | 0d |  | Александр Власюк | 40h |
| 317 | 1.4.4.14.20.3 | **Настраиваемые коллекции** |  | 8d? | 2014-05-15 | 2014-05-27 | 316 | 68.2d | 4.2d |  |  | 158.4h |
| 318 | 1.4.4.14.20.3.1 | **Конфигурация коллекций** |  | 7d | 2014-05-15 | 2014-05-26 |  | 68.2d | 0d |  |  | 152h |
| 319 | 1.4.4.14.20.3.1.1 | Типовая иерархия кастомных папок |  | 6d | 2014-05-15 | 2014-05-23 | 305 | 68.2d | 0d |  | Евгений Сафроненко | 48h |
| 320 | 1.4.4.14.20.3.1.2 | Доработка расширенного поиска |  | 7d | 2014-05-15 | 2014-05-26 | 319SS | 80.2d |  |  | Сергей Околот | 56h |
| 321 | 1.4.4.14.20.3.1.3 | Системные настройки для ФД |  | 6d | 2014-05-15 | 2014-05-23 | 319SS | 68.2d | 0d |  | Тимофей Билый | 48h |
| 322 | 1.4.4.14.20.3.2 | Проверка работы |  | 1d? | 2014-05-26 | 2014-05-27 | 318 | 80.2d |  |  | Глеб Ноздрачев [80%] | 6.4h |
| 323 | 1.4.4.14.20.4 | **Перенос логики сервисов по ФД** |  | 10d | 2014-04-25 | 2014-05-14 |  | 58d |  |  |  | 112h |
| 324 | 1.4.4.14.20.4.1 | Задание поставлено | milestone | 0d | 2014-04-25 | 2014-04-25 | 315 | 55d | 3d | start no earlier than 2013-09-30 | Тугушев Илья [80%] |  |
| 325 | 1.4.4.14.20.4.2 | Пролведение процедуры Revers Engineering для процессов |  | 7d | 2014-05-05 | 2014-05-14 | 324, 309 | 58d | 0d |  | Наталья Смолянец (Смолянец) | 56h |
| 326 | 1.4.4.14.20.4.3 | Реализация в слое CMJ-CMSochi |  | 7d | 2014-05-05 | 2014-05-14 | 325SS | 58d | 0d |  | Антон Ганчев (Киев) | 56h |
| 327 | 1.4.4.14.20.5 | **Разработка коллекций** |  | 6d | 2014-05-26 | 2014-06-02 |  | 53d |  |  |  | 144h |
| 328 | 1.4.4.14.20.5.1 | Коллекции |  | 6d | 2014-05-26 | 2014-06-02 | 315, 312 | 53d | 0d |  | (БТЛ) Олег Еренцов; (БТЛ) Дмитрий Лякин; (БТЛ)Сергей Степыгин | 144h |
| 329 | 1.4.4.14.20.6 | Интеграция по ФД выполнена | milestone | 0d | 2014-06-02 | 2014-06-02 | 316, 317, 328 | 60d |  |  |  |  |
| 330 | 1.4.4.14.21 | **Интеграция с CMJ по Заседаниям** |  | 24d? | 2014-05-07 | 2014-06-10 |  | 58d |  |  |  | 478.4h |
| 331 | 1.4.4.14.21.1 | Конфиг ДОП |  | 3d | 2014-05-07 | 2014-05-12 | 316 | 58d | 0d |  | Александр Власюк | 24h |
| 332 | 1.4.4.14.21.2 | Mapper |  | 5d | 2014-05-13 | 2014-05-19 | 331 | 58d | 0d |  | Александр Власюк | 40h |

Notes:
- 321: Системные настройки для ВнД (1дескр + 10типов) [NNN] 1 дн
- 322: Х тестовых РКК ВнД [YYY] 2ч

| ID | WBS | Task | Type | Duration | Start | Finish | Predecessors | Total slack | Free slack | Constraint | Resources | Work |
| --- | --- | --- | --- | --- | --- | --- | --- | --- | --- | --- | --- | --- |
| 333 | 1.4.4.14.21.3 | **Настраиваемые коллекции** |  | 8d? | 2014-05-23 | 2014-06-04 | 332 | 68.2d | 4.2d |  |  | 158.4h |
| 334 | 1.4.4.14.21.3.1 | **Конфигурация коллекций** |  | 7d | 2014-05-23 | 2014-06-03 |  | 68.2d | 0d |  |  | 152h |
| 335 | 1.4.4.14.21.3.1.1 | Типовая иерархия кастомных папок |  | 6d | 2014-05-23 | 2014-06-02 | 321 | 68.2d | 0d |  | Евгений Сафроненко | 48h |
| 336 | 1.4.4.14.21.3.1.2 | Системные настройки для Зсд |  | 6d | 2014-05-23 | 2014-06-02 | 335SS | 68.2d | 0d |  | Тимофей Билый | 48h |
| 337 | 1.4.4.14.21.3.1.3 | Доработка расширенного поиска |  | 7d | 2014-05-23 | 2014-06-03 | 335SS | 74.2d |  |  | Сергей Околот | 56h |
| 338 | 1.4.4.14.21.3.2 | Проверка работы |  | 1d? | 2014-06-03 | 2014-06-04 | 334 | 74.2d |  |  | Глеб Ноздрачев [80%] | 6.4h |
| 339 | 1.4.4.14.21.4 | **Перенос логики сервисов по Зсд** |  | 7d | 2014-05-14 | 2014-05-23 |  | 58d |  |  |  | 112h |
| 340 | 1.4.4.14.21.4.1 | Задание поставлено | milestone | 0d | 2014-05-14 | 2014-05-14 | 331, 325 | 42d | 0d | start no earlier than 2013-09-30 | Тугушев Илья [80%] |  |
| 341 | 1.4.4.14.21.4.2 | Пролведение процедуры Revers Engineering для процессов |  | 7d | 2014-05-15 | 2014-05-23 | 340, 326 | 58d | 0d |  | Наталья Смолянец (Смолянец) | 56h |
| 342 | 1.4.4.14.21.4.3 | Реализация в слое CMJ-CMSochi |  | 7d | 2014-05-15 | 2014-05-23 | 341SS | 82d |  |  | Антон Ганчев (Киев) | 56h |
| 343 | 1.4.4.14.21.5 | **Разработка коллекций** |  | 6d | 2014-06-03 | 2014-06-10 |  | 53d |  |  |  | 144h |
| 344 | 1.4.4.14.21.5.1 | Коллекции |  | 6d | 2014-06-03 | 2014-06-10 | 331, 328 | 53d | 0d |  | (БТЛ) Олег Еренцов; (БТЛ) Дмитрий Лякин; (БТЛ)Сергей Степыгин | 144h |
| 345 | 1.4.4.14.21.6 | Интеграция по Зсд выполнена | milestone | 0d | 2014-06-10 | 2014-06-10 | 332, 333, 344 | 54d |  |  |  |  |
| 346 | 1.4.4.14.22 | **Интеграция с CMJ по Обсуждениям и ознакомлениям** |  | 23d? | 2014-05-20 | 2014-06-19 |  | 58d |  |  |  | 502.4h |
| 347 | 1.4.4.14.22.1 | Конфиг ДОП |  | 3d | 2014-05-20 | 2014-05-22 | 332 | 58d | 0d |  | Александр Власюк | 24h |
| 348 | 1.4.4.14.22.2 | Mapper |  | 5d | 2014-05-23 | 2014-05-29 | 347 | 58d | 0d |  | Александр Власюк | 40h |
| 349 | 1.4.4.14.22.3 | **Настраиваемые коллекции** |  | 8d? | 2014-06-02 | 2014-06-12 | 348 | 68.2d | 5.2d |  |  | 158.4h |
| 350 | 1.4.4.14.22.3.1 | **Конфигурация коллекций** |  | 7d | 2014-06-02 | 2014-06-11 |  | 68.2d | 0d |  |  | 152h |
| 351 | 1.4.4.14.22.3.1.1 | Типовая иерархия кастомных папок |  | 6d | 2014-06-02 | 2014-06-10 | 336 | 68.2d | 0d |  | Евгений Сафроненко | 48h |
| 352 | 1.4.4.14.22.3.1.2 | Доработка расширенного поиска |  | 7d | 2014-06-02 | 2014-06-11 | 351SS | 68.2d |  |  | Сергей Околот | 56h |
| 353 | 1.4.4.14.22.3.1.3 | Системные настройки для ОО |  | 6d | 2014-06-02 | 2014-06-10 | 351SS | 69.2d |  |  | Тимофей Билый | 48h |
| 354 | 1.4.4.14.22.3.2 | Проверка работы |  | 1d? | 2014-06-11 | 2014-06-12 | 350 | 68.2d |  |  | Глеб Ноздрачев [80%] | 6.4h |
| 355 | 1.4.4.14.22.4 | **Перенос логики сервисов по ОО** |  | 8d | 2014-05-22 | 2014-06-03 |  | 58d |  |  |  | 112h |
| 356 | 1.4.4.14.22.4.1 | Задание поставлено | milestone | 0d | 2014-05-22 | 2014-05-22 | 347 | 43d | 1d | start no earlier than 2013-09-30 | Тугушев Илья [80%] |  |
| 357 | 1.4.4.14.22.4.2 | Пролведение процедуры Revers Engineering для процессов |  | 7d | 2014-05-26 | 2014-06-03 | 356, 341 | 58d | 0d |  | Наталья Смолянец (Смолянец) | 56h |
| 358 | 1.4.4.14.22.4.3 | Реализация в слое CMJ-CMSochi |  | 7d | 2014-05-26 | 2014-06-03 | 357SS | 58d | 0d |  | Антон Ганчев (Киев) | 56h |

Notes:
- 336: Системные настройки для ВнД (1дескр + 10типов) [NNN] 1 дн
- 338: Х тестовых РКК ВнД [YYY] 2ч
- 353: Системные настройки для ВнД (1дескр + 10типов) [NNN] 1 дн
- 354: Х тестовых РКК ВнД [YYY] 2ч

| ID | WBS | Task | Type | Duration | Start | Finish | Predecessors | Total slack | Free slack | Constraint | Resources | Work |
| --- | --- | --- | --- | --- | --- | --- | --- | --- | --- | --- | --- | --- |
| 359 | 1.4.4.14.22.5 | **Разработка коллекций** |  | 7d | 2014-06-11 | 2014-06-19 |  | 53d |  |  |  | 168h |
| 360 | 1.4.4.14.22.5.1 | Коллекции |  | 7d | 2014-06-11 | 2014-06-19 | 347, 344 | 53d | 0d |  | (БТЛ) Олег Еренцов; (БТЛ) Дмитрий Лякин; (БТЛ)Сергей Степыгин | 168h |
| 361 | 1.4.4.14.22.6 | Интеграция по ОО выполнена | milestone | 0d | 2014-06-19 | 2014-06-19 | 348, 349, 360 | 47d |  |  |  |  |
| 362 | 1.4.4.14.23 | **Интеграция с CMJ по "Кейсам"** |  | 25d? | 2014-05-30 | 2014-07-03 |  | 53d |  |  |  | 574.4h |
| 363 | 1.4.4.14.23.1 | Конфиг ДОП |  | 3d | 2014-05-30 | 2014-06-03 | 348 | 58d | 0d |  | Александр Власюк | 24h |
| 364 | 1.4.4.14.23.2 | Mapper |  | 5d | 2014-06-04 | 2014-06-10 | 363 | 62d | 0d |  | Александр Власюк | 40h |
| 365 | 1.4.4.14.23.3 | **Настраиваемые коллекции** |  | 8d? | 2014-06-11 | 2014-06-20 | 364 | 62d | 9d |  |  | 158.4h |
| 366 | 1.4.4.14.23.3.1 | **Конфигурация коллекций** |  | 7d | 2014-06-11 | 2014-06-19 |  | 62d | 0d |  |  | 152h |
| 367 | 1.4.4.14.23.3.1.1 | Типовая иерархия кастомных папок |  | 6d | 2014-06-11 | 2014-06-18 |  | 62d | 0d |  | Евгений Сафроненко | 48h |
| 368 | 1.4.4.14.23.3.1.2 | Доработка расширенного поиска |  | 7d | 2014-06-11 | 2014-06-19 | 367SS | 62d |  |  | Сергей Околот | 56h |
| 369 | 1.4.4.14.23.3.1.3 | Системные настройки для "Кейсов" |  | 6d | 2014-06-11 | 2014-06-18 | 367SS | 63d |  |  | Тимофей Билый | 48h |
| 370 | 1.4.4.14.23.3.2 | Проверка работы |  | 1d? | 2014-06-20 | 2014-06-20 | 366 | 62d |  |  | Глеб Ноздрачев [80%] | 6.4h |
| 371 | 1.4.4.14.23.4 | **Перенос логики сервисов по "Кейсам"** |  | 7d | 2014-06-03 | 2014-06-12 |  | 58d | 0d |  |  | 112h |
| 372 | 1.4.4.14.23.4.1 | Задание поставлено | milestone | 0d | 2014-06-03 | 2014-06-03 | 363, 358 | 58d | 0d | start no earlier than 2013-09-30 | Тугушев Илья [80%] |  |
| 373 | 1.4.4.14.23.4.2 | Пролведение процедуры Revers Engineering для процессов |  | 7d | 2014-06-04 | 2014-06-12 | 372 | 58d | 0d |  | Наталья Смолянец (Смолянец) | 56h |
| 374 | 1.4.4.14.23.4.3 | Реализация в слое CMJ-CMSochi |  | 7d | 2014-06-04 | 2014-06-12 | 373SS | 58d |  |  | Антон Ганчев (Киев) | 56h |
| 375 | 1.4.4.14.23.5 | **Разработка коллекций** |  | 10d | 2014-06-20 | 2014-07-03 |  | 53d |  |  |  | 240h |
| 376 | 1.4.4.14.23.5.1 | Коллекции |  | 10d | 2014-06-20 | 2014-07-03 | 363, 360 | 53d | 0d |  | (БТЛ) Олег Еренцов; (БТЛ) Дмитрий Лякин; (БТЛ)Сергей Степыгин | 240h |
| 377 | 1.4.4.14.23.6 | Интеграция по "Кейсам" выполнена | milestone | 0d | 2014-07-03 | 2014-07-03 | 364, 365, 376 | 37d |  |  |  |  |
| 378 | 1.4.4.14.24 | **Интеграция с CMJ ПКД** |  | 10d | 2014-06-12 | 2014-06-26 |  | 58d |  |  |  | 160h |
| 379 | 1.4.4.14.24.1 | **Перенос логики сервисов по ОО** |  | 10d | 2014-06-12 | 2014-06-26 |  | 58d |  |  |  | 160h |
| 380 | 1.4.4.14.24.1.1 | Задание поставлено | milestone | 0d | 2014-06-12 | 2014-06-12 | 358, 371 | 58d | 0d | start no earlier than 2013-09-30 | Тугушев Илья [80%] |  |
| 381 | 1.4.4.14.24.1.2 | Пролведение процедуры Revers Engineering для процессов |  | 10d | 2014-06-13 | 2014-06-26 | 380 | 58d | 0d |  | Наталья Смолянец (Смолянец) | 80h |
| 382 | 1.4.4.14.24.1.3 | Реализация в слое CMJ-CMSochi |  | 10d | 2014-06-13 | 2014-06-26 | 381SS | 58d |  |  | Антон Ганчев (Киев) | 80h |
| 383 | 1.4.4.14.25 | Основные коннеторы реализованы | milestone | 0d | 2013-12-09 | 2013-12-09 |  | 191d |  | start no earlier than 2013-12-09 |  |  |

Notes:
- 369: Системные настройки для ВнД (1дескр + 10типов) [NNN] 1 дн
- 370: Х тестовых РКК ВнД [YYY] 2ч

| ID | WBS | Task | Type | Duration | Start | Finish | Predecessors | Complete | Remaining | Total slack | Free slack | Constraint | Resources | Work | Actual work |
| --- | --- | --- | --- | --- | --- | --- | --- | --- | --- | --- | --- | --- | --- | --- | --- |
| 384 | 1.4.4.15 | **Проверка работоспособности решения - Организация демонстрации** |  | 4d | 2013-12-09 A | 2013-12-12 A | 383 | 100% |  |  |  |  |  | 112h | 112h |
| 385 | 1.4.4.15.1 | Подготовка стенда |  | 3d | 2013-12-09 A | 2013-12-11 A | 386SF | 100% |  |  |  |  | Java разработчик3; Аналитик | 48h | 48h |
| 386 | 1.4.4.15.2 | Подготовка прототипа |  | 2d | 2013-12-09 A | 2013-12-10 A |  | 100% |  |  |  |  | Java разработчик3; Аналитик | 32h | 32h |
| 387 | 1.4.4.15.3 | Проведение демонстраций |  | 1d | 2013-12-11 A | 2013-12-11 A | 386 | 100% |  |  |  |  | Java разработчик3; Аналитик | 16h | 16h |
| 388 | 1.4.4.15.4 | Анализ результатов - выводы |  | 1d | 2013-12-12 A | 2013-12-12 A | 387 | 100% |  |  |  |  | Java разработчик3; Аналитик | 16h | 16h |
| 389 | 1.4.4.16 | **Сервис работы с вложениями** |  | 22d | 2013-07-11 A | 2013-08-09 A |  | 100% |  |  |  |  |  | 176h | 176h |
| 390 | 1.4.4.16.1 | Принято решение о проектировании сервиса обработки вложений | milestone | 0d | 2013-07-11 A | 2013-07-11 A |  | 100% |  |  |  | start no earlier than 2013-07-11 |  |  |  |
| 391 | 1.4.4.16.2 | API |  | 5d | 2013-07-11 A | 2013-07-17 A | 390 | 100% |  |  |  |  | Андрей Цветков | 40h | 40h |
| 392 | 1.4.4.16.3 | Реализация |  | 7d | 2013-07-18 A | 2013-07-26 A | 391 | 100% |  |  |  |  | Влад Симоненко | 56h | 56h |
| 393 | 1.4.4.16.4 | Исследования по перехватчику конца транзакции |  | 5d | 2013-07-29 A | 2013-08-02 A | 392 | 100% |  |  |  |  | Влад Симоненко | 40h | 40h |
| 394 | 1.4.4.16.5 | Чистка файлов в случае отката транзакции |  | 5d | 2013-08-05 A | 2013-08-09 A | 393 | 100% |  |  |  |  | Влад Симоненко | 40h | 40h |
| 395 | 1.4.4.17 | **Механизм формирования отчетов** |  | 30d | 2013-11-01 A | 2013-12-12 A |  | 100% |  |  |  |  |  | 240h | 240h |
| 396 | 1.4.4.17.1 | Определен состав отчетов | milestone | 0d | 2013-11-01 A | 2013-11-01 A |  | 100% |  |  |  | start no earlier than 2013-11-01 |  |  |  |
| 397 | 1.4.4.17.2 | Система готова к интеграции с модулем отчетов | milestone | 0d | 2013-11-01 A | 2013-11-01 A | 396 | 100% |  |  |  | start no earlier than 2013-09-30 | Денис Митавский [50%]; Андрей Цветков |  |  |
| 398 | 1.4.4.17.3 | JDBC-драйвер для системы построения отчётов |  | 10d | 2013-11-01 A | 2013-11-14 A | 59, 397 | 100% |  |  |  |  | (БТЛ) Михаил Ларин | 80h | 80h |
| 399 | 1.4.4.17.4 | Интеграция с Jasper Reports |  | 20d | 2013-11-15 A | 2013-12-12 A | 398, 74 | 100% |  |  |  |  | (БТЛ) Михаил Ларин | 160h | 160h |
| 400 | 1.4.4.18 | **GUI** |  | 325d | 2013-04-22 A | 2014-08-11 |  | 53% | 152.9d | 24d | 0d |  |  | 2144h | 1282.4h |
| 401 | 1.4.4.18.1 | Принято решение о применении GWT-компонентов | milestone | 0d | 2013-07-22 A | 2013-07-22 A |  | 100% |  |  |  | start no earlier than 2013-07-22 |  |  |  |
| 402 | 1.4.4.18.2 | Адаптация компонентов GUI из СМ4 для наложения на архитектуру см5 |  | 30d | 2013-07-22 A | 2013-09-02 A | 401 | 100% |  |  |  | start no earlier than 2013-07-11 | Тимофей Билый; Алексей Львов | 480h | 480h |
| 403 | 1.4.4.18.3 | Изучение GWT/Настройка CMJ 4 для дебага |  | 4d | 2013-08-05 A | 2013-08-08 A |  | 100% |  |  |  | start no earlier than 2013-08-05 | Андрей Карандей | 32h | 32h |
| 404 | 1.4.4.18.4 | Разработка базовой архитектуры GUI на основе GWT-компонентов |  | 3d | 2013-07-22 A | 2013-07-24 A | 401 | 100% |  |  |  |  | Денис Митавский | 24h | 24h |
| 405 | 1.4.4.18.5 | Интеграция с JAAS/Аутентификация |  | 5d | 2013-07-31 A | 2013-08-06 A | 404 | 100% |  |  |  | start no earlier than 2013-07-08 | Денис Митавский | 40h | 40h |
| 406 | 1.4.4.18.6 | Архитектура разметки главного экрана |  | 2d | 2013-08-07 A | 2013-08-08 A | 405 | 100% |  |  |  |  | Денис Митавский [50%] | 8h | 8h |
| 407 | 1.4.4.18.7 | **Панель навигации** |  | 29d | 2013-08-09 A | 2013-09-18 |  | 85% | 4.35d | 246d |  |  |  | 56h | 46.4h |
| 408 | 1.4.4.18.7.1 | Проектирование - панель навигации |  | 2d | 2013-08-09 A | 2013-08-12 A | 406 | 100% |  |  |  |  | Денис Митавский [50%] | 8h | 8h |
| 409 | 1.4.4.18.7.2 | Разработка - панель навигации |  | 6d | 2013-09-11 A | 2013-09-18 | 408, 411 | 80% | 1.2d | 256d |  |  | Андрей Карандей | 48h | 38.4h |
| 410 | 1.4.4.18.8 | GUI - архитектура плагинов/дочерних плагинов. Базис |  | 15d | 2013-08-13 A | 2013-09-03 A | 408 | 100% |  |  |  |  | Денис Митавский | 120h | 120h |
| 411 | 1.4.4.18.9 | Базовая реализация архитектуры плагинов |  | 5d | 2013-09-04 A | 2013-09-10 A | 410 | 100% |  |  |  |  | Андрей Карандей | 40h | 40h |

Notes:
- 397: Используя язык запросов коллеций
- 398: Используя язык запросов коллеций

| ID | WBS | Task | Duration | Start | Finish | Predecessors | Complete | Remaining | Total slack | Free slack | Constraint | Resources | Work | Actual work |
| --- | --- | --- | --- | --- | --- | --- | --- | --- | --- | --- | --- | --- | --- | --- |
| 412 | 1.4.4.18.10 | **GUI - плагин отображения коллекций** | 15d | 2013-09-04 A | 2013-09-24 A | 410 | 100% |  |  |  |  |  | 64h | 64h |
| 413 | 1.4.4.18.10.1 | Проектирование | 2d | 2013-09-04 A | 2013-09-05 A | 410 | 100% |  |  |  |  | Денис Митавский | 16h | 16h |
| 414 | 1.4.4.18.10.2 | Разработка | 6d | 2013-09-17 A | 2013-09-24 A | 420 | 100% |  |  |  |  | Ярослав Бондарчук | 48h | 48h |
| 415 | 1.4.4.18.11 | **GUI - действия** | 96d | 2013-04-22 A | 2013-09-09 A |  | 100% |  |  |  |  |  | 8h | 8h |
| 416 | 1.4.4.18.11.1 | Проектирование | 2d | 2013-09-06 A | 2013-09-09 A | 413 | 100% |  |  |  |  | Денис Митавский [50%] | 8h | 8h |
| 417 | 1.4.4.18.11.2 | Разработка | 6d | 2013-04-22 A | 2013-04-29 A |  | 100% |  |  |  |  |  |  |  |
| 418 | 1.4.4.18.12 | **Формы встроенного GUI** | 15d | 2013-09-10 A | 2013-09-30 A |  | 100% |  |  |  |  |  | 124h | 124h |
| 419 | 1.4.4.18.12.1 | Конфигурация-архитектура | 1d | 2013-09-10 A | 2013-09-10 A | 416 | 100% |  |  |  |  | Денис Митавский [50%] | 4h | 4h |
| 420 | 1.4.4.18.12.2 | Маппинг на объекты | 2d | 2013-09-13 A | 2013-09-16 A | 419 | 100% |  |  |  |  | Ярослав Бондарчук | 16h | 16h |
| 421 | 1.4.4.18.12.3 | API GWT client-server | 3d | 2013-09-13 A | 2013-09-17 A | 419 | 100% |  |  |  |  | Денис Митавский | 24h | 24h |
| 422 | 1.4.4.18.12.4 | Реализация чтения | 5d | 2013-09-24 A | 2013-09-30 A | 49 | 100% |  |  |  |  | Денис Митавский | 40h | 40h |
| 423 | 1.4.4.18.12.5 | Реализация сохранения | 5d | 2013-09-19 A | 2013-09-25 A | 409, 421 | 100% |  |  |  |  | Андрей Карандей | 40h | 40h |
| 424 | 1.4.4.18.13 | **GUI - поиск** | 32d | 2013-12-23 A | 2014-02-14 A |  | 100% |  |  |  |  |  | 256h | 256h |
| 425 | 1.4.4.18.13.1 | GUI - поиск. Проектирование | 20d | 2013-12-23 A | 2014-01-29 A |  | 100% |  |  |  | start no earlier than 2013-12-23 | Игорь Петров | 160h | 160h |
| 426 | 1.4.4.18.13.2 | GUI - поиск. Реализация | 12d | 2014-01-30 A | 2014-02-14 A | 425 | 100% |  |  |  |  | Игорь Петров | 96h | 96h |
| 427 | 1.4.4.18.14 | **GUI - виджеты разработка** | 181d | 2013-10-01 A | 2014-06-25 |  | 5% | 171.47d | 24d |  |  |  | 760h | 40h |
| 428 | 1.4.4.18.14.1 | Дата/время | 5d | 2013-10-01 A | 2013-10-07 A | 422 | 100% |  |  |  |  | Тимофей Билый | 40h | 40h |
| 429 | 1.4.4.18.14.2 | Остальные без особенностей стиля ст.лебедева (базовый набор) | 50d | 2014-02-17 | 2014-04-25 | 422, 426, 399 |  |  | 24d | 0d |  | Денис Митавский | 400h |  |
| 430 | 1.4.4.18.14.3 | Остальные для стиля ст.лебедева | 40d | 2014-04-28 | 2014-06-25 | 429 |  |  | 24d | 0d |  | Денис Митавский | 320h |  |
| 431 | 1.4.4.18.15 | **GUI - брендинг, стилизация, темы** | 33d | 2014-06-26 | 2014-08-11 |  |  |  | 24d |  |  |  | 132h |  |
| 432 | 1.4.4.18.15.1 | Концепция | 10d | 2014-06-26 | 2014-07-09 | 425, 429, 430 |  |  | 24d | 0d |  | Денис Митавский [50%] | 40h |  |
| 433 | 1.4.4.18.15.2 | Реализация | 23d | 2014-07-10 | 2014-08-11 | 432 |  |  | 24d |  |  | Денис Митавский [50%] | 92h |  |
| 434 | 1.4.4.19 | Тестирование производительности конфигурации | 25d | 2013-09-10 A | 2013-10-14 A | 415 | 100% |  |  |  |  | (БТЛ)Сергей Степыгин; (БТЛ) Дмитрий Лякин | 400h | 400h |
| 435 | 1.4.4.20 | **Дополнительные сервисы платформы** | 167d | 2013-12-09 A | 2014-08-13 |  | 32% | 114.37d | 24d |  |  |  | 1352h | 416h |
| 436 | 1.4.4.20.1 | Расширение функциональности DAO (требования CMJ4.1, базовые требования) | 30d | 2013-12-09 A | 2014-01-29 A | 36, 383 | 100% |  |  |  |  | Валерий Мацукевич | 240h | 240h |
| 437 | 1.4.4.20.2 | Защита конфигурационных файлов от изменений | 21d | 2014-01-30 A | 2014-02-27 A | 436 | 100% |  |  |  |  | Валерий Мацукевич | 168h | 168h |
| 438 | 1.4.4.20.3 | Выделение конфигурации GUI в отдельные сущности, к изменению формата которых система не будет восприимчива | 20d | 2014-02-28 A | 2014-03-27 | 437 | 5% | 19d | 28d | 0d |  | Валерий Мацукевич | 160h | 8h |
| 439 | 1.4.4.20.4 | Версионность/аудит | 20d | 2014-03-28 | 2014-04-24 | 437, 438 |  |  | 28d | 0d |  | Валерий Мацукевич | 160h |  |
| 440 | 1.4.4.20.5 | Блокировки бизнес-объектов | 21d | 2014-04-25 | 2014-05-28 | 439 |  |  | 28d | 0d |  | Валерий Мацукевич | 168h |  |
| 441 | 1.4.4.20.6 | Уточнение состава и сроков работ | 2d | 2014-08-12 | 2014-08-13 | 400 |  |  | 24d |  |  | Андрей Пирожков; Денис Митавский; Тугушев Илья | 48h |  |
| 442 | 1.4.4.20.7 | Кросс-СУБД, поддержка Oracle | 20d | 2014-05-29 | 2014-06-25 | 440 |  |  | 28d | 0d |  | Валерий Мацукевич | 160h |  |
| 443 | 1.4.4.20.8 | SQL-trace | 16d | 2014-06-26 | 2014-07-17 | 442 |  |  | 28d | 0d |  | Валерий Мацукевич | 128h |  |
| 444 | 1.4.4.20.9 | Локализация (на уровне конфигурации) | 15d | 2014-07-18 | 2014-08-07 | 443 |  |  | 28d |  |  | Сергей Околот | 120h |  |

Notes:
- 434: - полноценное, продуманное, конфигурируемое, полностью автоматизированное (вплоть до промежуточного сбора статистики в СУБД перед запуском тестов производительности) с автоматической генерацией таблиц и графиков, с поддержкой нагружающих потоков и т.п.
- 439: История модификации объекта / Версионность - на бизнес слой
- 442: Кросс-СУБД, поддержка Oracle
- 444: Поддержка ресурсных файлов - в расках конфигурирования ресурсных файлов / Подмена языка в интерфейсе (передача локали пользоввателю) -

| ID | WBS | Task | Type | Duration | Start | Finish | Predecessors | Complete | Remaining | Total slack | Free slack | Constraint | Resources | Work | Actual work |
| --- | --- | --- | --- | --- | --- | --- | --- | --- | --- | --- | --- | --- | --- | --- | --- |
| 445 | 1.4.4.21 | **Интеграция с системой управления учетными записями** |  | 14d | 2014-05-29 | 2014-06-17 | 440 |  |  | 65d |  |  |  | 56h |  |
| 446 | 1.4.4.21.1 | Интеграция с ActiveDirectory |  | 14d | 2014-05-29 | 2014-06-17 |  |  |  | 75d |  |  | Андрей Пирожков [50%] | 56h |  |
| 447 | 1.4.4.22 | **Расширение функций сервиса конфигурации** |  | 128d | 2013-07-09 A | 2014-01-14 A | 442 | 100% |  |  |  |  |  | 352h | 352h |
| 448 | 1.4.4.22.1 | Расширяемость конфигурации |  | 12d | 2013-07-09 A | 2013-12-11 A |  | 100% |  |  |  |  | Валерий Мацукевич | 96h | 96h |
| 449 | 1.4.4.22.2 | Изменение и дополнение конфигурации системы |  | 16d | 2013-12-12 A | 2014-01-14 A | 448 | 100% |  |  |  |  | Андрей Пирожков; Роман Митинков | 256h | 256h |
| 450 | 1.4.4.23 | **Сервис для работы с системным журналом** |  | 15d | 2014-01-15 A | 2014-02-04 | 449 | 67% | 5d | 157d |  |  |  | 120h | 80h |
| 451 | 1.4.4.23.1 | Ведение журнала действий пользователей и действий с объектами системы |  | 10d | 2014-01-15 A | 2014-01-28 A |  | 100% |  |  |  |  | (БТЛ) Михаил Ларин | 80h | 80h |
| 452 | 1.4.4.23.2 | Настройка уровня логирования |  | 5d | 2014-01-29 | 2014-02-04 | 451 |  |  | 157d |  |  | Андрей Карандей | 40h |  |
| 453 | 1.4.4.24 | **Подсистема нотификаций** |  | 53d | 2014-01-20 A | 2014-04-02 |  | 8% | 48.73d | 46d | 0d |  |  | 752h | 40h |
| 454 | 1.4.4.24.1 | Описание принципов устройства и функционирования подсистемы нотификаций |  | 10d | 2014-01-20 A | 2014-01-31 |  | 50% | 5d | 46d | 0d |  | Андрей Пирожков | 80h | 40h |
| 455 | 1.4.4.24.2 | Подготовка проекта подсистемы нотификаций |  | 17d | 2014-02-03 | 2014-02-25 | 454 |  |  | 46d | 0d |  | Андрей Пирожков; (БТЛ) Михаил Ларин | 272h |  |
| 456 | 1.4.4.24.3 | **Разработка подсистемы** |  | 20d | 2014-03-06 | 2014-04-02 |  |  |  | 46d |  |  |  | 400h |  |
| 457 | 1.4.4.24.3.1 | Доработка существующих сервисов |  | 15d | 2014-03-06 | 2014-03-26 | 455FS+6d |  |  | 46d | 0d |  | (БТЛ) Михаил Ларин [50%]; Андрей Цветков | 140h |  |
| 458 | 1.4.4.24.3.2 | Разработка специфичного функционала подсистемы |  | 15d | 2014-03-06 | 2014-03-26 | 457SS |  |  | 46d | 0d |  | (БТЛ) Михаил Ларин [50%]; Роман Митинков | 140h |  |
| 459 | 1.4.4.24.3.3 | Сборка и отладка |  | 5d | 2014-03-27 | 2014-04-02 | 457, 458 |  |  | 46d |  |  | (БТЛ) Михаил Ларин; Андрей Цветков; Роман Митинков | 120h |  |
| 460 | 1.4.5 | **Архитектурный комитет** |  | 264d | 2013-06-11 A | 2014-06-30 | 15 | 49% | 134d | 56d |  |  |  | 2524h | 1535.2h |
| 461 | 1.4.5.1 | Контроль и корректировка технических решений "Архитектурный комитет" |  | 264d | 2013-06-11 A | 2014-06-30 |  | 49% | 134d | 56d |  |  | Тугушев Илья [20%]; Андрей Пирожков [23.2%]; Денис Митавский [20%]; WEB-дизайнер [20%]; Аналитик [20%]; Владимир Панов [50%] | 2524h | 1535.2h |
| 462 | 1.4.6 | **Средства мониторинга** |  | 33d | 2014-03-05 | 2014-04-18 |  |  |  | 104d |  |  |  | 384h |  |
| 463 | 1.4.6.1 | уточнена постановка | milestone | 0d | 2014-03-05 | 2014-03-05 |  |  |  | 104d | 0d | start no earlier than 2014-03-05 |  |  |  |
| 464 | 1.4.6.2 | **Проектирование и формализация** |  | 6d | 2014-03-05 | 2014-03-12 |  |  |  | 104d |  |  |  | 48h |  |
| 465 | 1.4.6.2.1 | Определение параметров контроля |  | 3d | 2014-03-05 | 2014-03-07 | 463 |  |  | 104d | 0d |  | Андрей Пирожков | 24h |  |
| 466 | 1.4.6.2.2 | Разработка методики контроля |  | 3d | 2014-03-10 | 2014-03-12 | 465 |  |  | 104d | 0d |  | Андрей Пирожков | 24h |  |
| 467 | 1.4.6.3 | **Реализация** |  | 27d | 2014-03-13 | 2014-04-18 |  |  |  | 104d |  |  |  | 336h |  |
| 468 | 1.4.6.3.1 | Определение точек контроля системы |  | 7d | 2014-03-13 | 2014-03-21 | 466 |  |  | 104d | 0d |  | Андрей Пирожков | 56h |  |
| 469 | 1.4.6.3.2 | Разработка счетчиков точек контроля |  | 15d | 2014-03-24 | 2014-04-11 | 468 |  |  | 104d | 0d |  | Андрей Пирожков; Java разработчик4 | 240h |  |
| 470 | 1.4.6.3.3 | Сборка "zabbix" |  | 5d | 2014-04-14 | 2014-04-18 | 469 |  |  | 104d |  |  | Java разработчик4 | 40h |  |

Notes:
- 450: Сервис для работы с системным журналомВедение журнала действий пользователей и действий с объектами системы
- 451: Ведение журнала действий пользователей и действий с объектами системы

| ID | WBS | Task | Type | Duration | Start | Finish | Predecessors | Complete | Remaining | Total slack | Free slack | Constraint | Resources | Work | Actual work |
| --- | --- | --- | --- | --- | --- | --- | --- | --- | --- | --- | --- | --- | --- | --- | --- |
| 471 | 1.4.7 | **Стабилизация ядра системы** |  | 67d | 2014-04-03 | 2014-07-09 |  |  |  | 46d |  |  |  | 1632h |  |
| 472 | 1.4.7.1 | Исправление ошибок в ядре |  | 70d | 2014-04-03 | 2014-07-09 | 453 |  |  | 46d |  |  | Андрей Цветков [50%]; Валерий Мацукевич [50%]; Роман Митинков [50%] | 816h |  |
| 473 | 1.4.7.2 | Доработка недостающего функционала |  | 70d | 2014-04-03 | 2014-07-09 | 453 |  |  | 46d |  |  | Андрей Цветков [50%]; Валерий Мацукевич [50%]; Роман Митинков [50%] | 816h |  |
| 474 | 1.4.8 | **Разработка Форм для АРМ тематических администраторов** |  | 121.75d | 2013-12-23 A | 2014-06-25 | 70 | 22% | 94.75d | 59d |  |  |  | 880h | 204h |
| 475 | 1.4.8.1 | Предварительный Сбор и подготовка требований |  | 20d | 2013-12-23 A | 2014-01-30 A |  | 100% |  |  |  |  | Пестова Ольга (Киев) | 160h | 160h |
| 476 | 1.4.8.2 | Уточнение стребований к АРМ тематичесхких админов |  | 30d | 2014-02-10 A | 2014-03-21 |  | 18% | 24.5d | 59d | 0d | start no earlier than 2014-02-10 | Тимофей Щербатый | 240h | 44h |
| 477 | 1.4.8.3 | **Подготовка работы со списками значений** |  | 30d | 2014-03-24 | 2014-05-06 |  |  |  | 59d |  |  |  | 240h |  |
| 478 | 1.4.8.3.1 | Разработка функционала учета организационно штатной структуры |  | 10d | 2014-03-24 | 2014-04-04 | 476 |  |  | 59d | 0d |  | Ярослав Бондарчук | 80h |  |
| 479 | 1.4.8.3.2 | Разработка функционала с рубрикаторами (сложные справочники) |  | 10d | 2014-04-07 | 2014-04-18 | 478 |  |  | 59d | 0d |  | Ярослав Бондарчук | 80h |  |
| 480 | 1.4.8.3.3 | Разработка функционала для работы с словарями данных (простые, линейные справочники) |  | 10d | 2014-04-21 | 2014-05-06 | 479 |  |  | 59d | 0d |  | Ярослав Бондарчук | 80h |  |
| 481 | 1.4.8.4 | Разработка форм для работы в GUI (настройки форм) |  | 10d | 2014-05-07 | 2014-05-21 | 480 |  |  | 59d | 0d |  | Ярослав Бондарчук | 80h |  |
| 482 | 1.4.8.5 | Разработка структуры рабочего места АРМ |  | 5d | 2014-05-22 | 2014-05-28 | 481 |  |  | 59d | 0d |  |  |  |  |
| 483 | 1.4.8.6 | Разработка специфичных для форм АРМ элементов GUI |  | 20d | 2014-05-29 | 2014-06-25 | 482 |  |  | 59d |  |  | Ярослав Бондарчук | 160h |  |
| 484 | 1.4.9 | **Подготовка базового набора отчетов и ГО** |  | 110d | 2014-02-10 | 2014-07-16 |  |  |  | 44d |  |  |  | 1560h |  |
| 485 | 1.4.9.1 | Данные для подготовки базового набора отчетов собраны | milestone | 0d | 2014-02-10 | 2014-02-10 |  |  |  | 44d | 0d | start no earlier than 2014-02-10 |  |  |  |
| 486 | 1.4.9.2 | Структура данных для отчетов подготовлена и описана | milestone | 0d | 2014-02-10 | 2014-02-10 | 485 |  |  | 44d | 0d |  |  |  |  |
| 487 | 1.4.9.3 | Механизм управления отчетными формами подготовлен | milestone | 0d | 2014-02-10 | 2014-02-10 | 486 |  |  | 44d | 0d |  |  |  |  |
| 488 | 1.4.9.4 | Уточнение требований по шаблонам отчетов |  | 20d | 2014-02-10 | 2014-03-07 | 487 |  |  | 44d | 0d |  | Евгения Капустина [50%] | 80h |  |
| 489 | 1.4.9.5 | Требования по отображению отчетов сформированы | milestone | 0d | 2014-03-07 | 2014-03-07 | 488 |  |  | 44d | 0d |  |  |  |  |
| 490 | 1.4.9.6 | GUI - отображение отчётов |  | 15d | 2014-03-10 | 2014-03-28 | 489 |  |  | 119d |  |  | Денис Митавский | 120h |  |
| 491 | 1.4.9.7 | Подготовка отчетов |  | 40d | 2014-03-10 | 2014-05-06 | 489 |  |  | 44d | 0d |  | Влад Симоненко; Алексей Львов; Андрей Карандей | 960h |  |
| 492 | 1.4.9.8 | Сопряжение с мобильным клиентом СМ4 |  | 50d | 2014-05-07 | 2014-07-16 | 491 |  |  | 44d |  |  | Java разработчик3 | 400h |  |
| 493 | 1.4.10 | **Тестирование** |  | 79d? | 2014-03-21 | 2014-07-14 | 218 |  |  | 46d | 0d |  |  | 2544h |  |
| 494 | 1.4.10.1 | **Функциональное тестирование** |  | 64d? | 2014-03-21 | 2014-06-23 |  |  |  | 57d |  |  |  | 2224h |  |
| 495 | 1.4.10.1.1 | Подготовка ПМИ |  | 5d | 2014-03-21 | 2014-03-27 |  |  |  | 57d | 0d |  | Тест Аналитик | 40h |  |
| 496 | 1.4.10.1.2 | Разработка "сценариев тестирования" |  | 15d | 2014-03-21 | 2014-04-10 |  |  |  | 62d | 11d |  | Тест Аналитик | 120h |  |
| 497 | 1.4.10.1.3 | Разработка модели нагрузки для тестирования |  | 10d | 2014-03-28 | 2014-04-10 | 495 |  |  | 62d | 11d |  | Тест Аналитик | 80h |  |
| 498 | 1.4.10.1.4 | Адаптация автоматизированных сценариев от СМ4 для создания нагрузки |  | 25d | 2014-03-28 | 2014-05-05 | 495 |  |  | 57d | 11d |  | Влад Симоненко | 200h |  |

| ID | WBS | Task | Type | Duration | Start | Finish | Predecessors | Total slack | Free slack | Constraint | Resources | Work |
| --- | --- | --- | --- | --- | --- | --- | --- | --- | --- | --- | --- | --- |
| 499 | 1.4.10.1.5 | **Проведение тестирования** |  | 38d? | 2014-04-28 | 2014-06-23 | 496, 497 | 51d |  |  |  | 1784h |
| 500 | 1.4.10.1.5.1 | **Подготовка среды тестирования** |  | 15d? | 2014-04-28 | 2014-05-21 |  | 51d |  |  |  | 200h |
| 501 | 1.4.10.1.5.1.1 | Разворачивание системы |  | 5d? | 2014-04-28 | 2014-05-07 | 503SF | 94d | 0d |  | Влад Симоненко | 40h |
| 502 | 1.4.10.1.5.1.2 | Система готова для подключения инструментов мониторинга | milestone | 0d | 2014-05-07 | 2014-05-07 | 501 | 94d |  |  |  |  |
| 503 | 1.4.10.1.5.1.3 | Наполнение данными |  | 10d? | 2014-05-07 | 2014-05-21 | 491 | 46d | 0d |  | Влад Симоненко; Java разработчик6 | 160h |
| 504 | 1.4.10.1.5.2 | Среда тестирования готова | milestone | 0d | 2014-05-21 | 2014-05-21 | 503, 498 | 46d | 0d | start no earlier than 2012-05-24 |  |  |
| 505 | 1.4.10.1.5.3 | Проведение тестирования |  | 10d | 2014-05-22 | 2014-06-04 | 504 | 46d | 0d |  | Тест Аналитик; Тестировщик [200%] | 240h |
| 506 | 1.4.10.1.5.4 | **Обработка результатов тестирования и внесение изменений в модуль** |  | 15d | 2014-06-03 | 2014-06-23 | 505FS-2d | 46d |  |  |  | 1344h |
| 507 | 1.4.10.1.5.4.1 | Устранение замечаний по результатам функционального тестирования |  | 15d | 2014-06-03 | 2014-06-23 |  | 46d | 0d |  | Java разработчик5; Влад Симоненко [300%]; Валерий Мацукевич; Java разработчик3; Java разработчик4; Андрей Карандей; Алексей Львов; Андрей Цветков | 1200h |
| 508 | 1.4.10.1.5.4.2 | Проверка устранения замечаний |  | 6d | 2014-06-16 | 2014-06-23 | 507FS-6d | 46d | 0d |  | Тест Аналитик; Тестировщик [200%] | 144h |
| 509 | 1.4.10.2 | **Нагрузочное тестирование** |  | 28d | 2014-06-04 | 2014-07-14 | 495 | 46d |  |  |  | 320h |
| 510 | 1.4.10.2.1 | Стенд для нагрузочного тестирования подготовлен | milestone | 0d | 2014-06-04 | 2014-06-04 | 505 | 59d | 13d | finish no earlier than 2012-06-09 |  |  |
| 511 | 1.4.10.2.2 | Проведения нагрузочного тестирования |  | 10d | 2014-06-24 | 2014-07-07 | 508, 498, 510 | 46d | 0d |  | Влад Симоненко; Тест Аналитик; Тестировщик | 240h |
| 512 | 1.4.10.2.3 | Обработка результатов нагрузочного тестирования |  | 5d | 2014-07-08 | 2014-07-14 | 511 | 46d |  |  | Тест Аналитик; Тестировщик | 80h |
| 513 | 1.4.11 | **Подготовка документации** |  | 80d | 2014-03-21 | 2014-07-15 | 493SS | 45d |  |  |  | 640h |
| 514 | 1.4.11.1 | Разработка документа "Концепция системы " |  | 40d | 2014-03-21 | 2014-05-20 |  | 45d | 0d |  | Владимир Панов | 320h |
| 515 | 1.4.11.2 | Разработка "Software Architecture Document" |  | 40d | 2014-05-21 | 2014-07-15 | 514 | 45d | 0d |  | Владимир Панов | 320h |
| 516 | 1.4.11.3 | Документы подготовлены | milestone | 0d | 2014-07-15 | 2014-07-15 | 515 | 45d |  |  |  |  |
